# コーポレートサイト リニューアル

Schedule from MS Project XML, 2026-06-08 to 2026-11-02, status date 2026-10-09, costs in ￥, A marks actual dates.
Web サイト リニューアル
青葉フーズ株式会社

## Calendars

- 標準: Mon-Fri 08:00-12:00, 13:00-17:00; Sat-Sun off. Exceptions (off unless hours are given): 2026-07-20 (海の日), 2026-08-11 (山の日), 2026-08-13 to 2026-08-14 (夏季休暇), 2026-09-21 (敬老の日), 2026-09-23 (秋分の日), 2026-10-12 (スポーツの日).

## Resources

| Resource | Group | Rate |
| --- | --- | --- |
| 新井 美香 | プロジェクト管理 | 9000 |
| 佐藤 健二 | UX デザイン | 8000 |
| 小野 遥 | ビジュアルデザイン | 7500 |
| 武田 涼 | Web 開発 | 8500 |
| 中村 結衣 | Web 開発 | 8500 |
| 石井 直 | コンテンツ | 6000 |
| 藤田 翔 | 品質保証 | 6500 |
| 撮影外注費 | 外部費用 |  |
| CMS ライセンス・ホスティング費 | 外部費用 |  |

## Schedule

| ID | WBS | Task | Type | Duration | Start | Finish | Predecessors | Complete | Baseline start | Baseline finish | Baseline duration | Deadline | Resources | Work | Actual work | Cost | Baseline cost | Actual cost | 担当チーム | 成果物 |
| --- | --- | --- | --- | --- | --- | --- | --- | --- | --- | --- | --- | --- | --- | --- | --- | --- | --- | --- | --- | --- |
| 1 | 1 | **1. 立ち上げ** |  | 13d | 2026-06-08 A | 2026-06-24 A |  | 100% | 2026-06-08 | 2026-06-24 | 13d |  |  | 233.6h | 233.6h | 18,776 | 18,776 | 18,776 |  |  |
| 2 | 1.1 | キックオフ会議 |  | 1d | 2026-06-08 A | 2026-06-08 A |  | 100% | 2026-06-08 | 2026-06-08 | 1d |  | 新井 美香; 佐藤 健二; 小野 遥; 武田 涼; 中村 結衣; 藤田 翔 | 48h | 48h | 3,840 | 3,840 | 3,840 | プロジェクト管理 |  |
| 3 | 1.2 | 現行サイト分析 |  | 5d | 2026-06-09 A | 2026-06-15 A | 2 | 100% | 2026-06-09 | 2026-06-15 | 5d |  | 佐藤 健二; 新井 美香 [30%] | 52h | 52h | 4,280 | 4,280 | 4,280 | UX デザイン |  |
| 4 | 1.3 | 競合ベンチマーク調査 |  | 4d | 2026-06-09 A | 2026-06-12 A | 2 | 100% | 2026-06-09 | 2026-06-12 | 4d |  | 佐藤 健二 [50%]; 石井 直 [30%] | 25.6h | 25.6h | 1,856 | 1,856 | 1,856 | UX デザイン |  |
| 5 | 1.4 | 要件ワークショップ |  | 3d | 2026-06-16 A | 2026-06-18 A | 3, 4 | 100% | 2026-06-16 | 2026-06-18 | 3d |  | 新井 美香; 佐藤 健二; 石井 直 [50%] | 60h | 60h | 4,800 | 4,800 | 4,800 | プロジェクト管理 |  |
| 6 | 1.5 | 要件定義書 作成 |  | 4d | 2026-06-19 A | 2026-06-24 A | 5 | 100% | 2026-06-19 | 2026-06-24 | 4d |  | 新井 美香 [50%]; 佐藤 健二 | 48h | 48h | 4,000 | 4,000 | 4,000 | プロジェクト管理 | 要件定義書 |
| 7 | 1.6 | 要件定義 承認 | milestone | 0d | 2026-06-24 A | 2026-06-24 A | 6 | 100% | 2026-06-24 | 2026-06-24 | 0d | 2026-06-24 |  |  |  |  |  |  | プロジェクト管理 |  |
| 8 | 2 | **2. IA・デザイン** |  | 31d | 2026-06-25 A | 2026-08-07 A |  | 100% | 2026-06-25 | 2026-08-05 | 29d |  |  | 340.8h | 340.8h | 26,552 | 25,352 | 26,552 |  |  |
| 9 | 2.1 | サイトマップ・IA 設計 |  | 5d | 2026-06-25 A | 2026-07-01 A | 7 | 100% | 2026-06-25 | 2026-07-01 | 5d |  | 佐藤 健二 | 40h | 40h | 3,200 | 3,200 | 3,200 | UX デザイン |  |
| 10 | 2.2 | ワイヤーフレーム作成 |  | 8d | 2026-07-02 A | 2026-07-13 A | 9 | 100% | 2026-07-02 | 2026-07-13 | 8d |  | 佐藤 健二; 新井 美香 [20%] | 76.8h | 76.8h | 6,272 | 6,272 | 6,272 | UX デザイン |  |
| 11 | 2.3 | デザインシステム・スタイルガイド策定 |  | 5d | 2026-07-06 A | 2026-07-10 A | 10SS+2d | 100% | 2026-07-06 | 2026-07-10 | 5d |  | 小野 遥 | 40h | 40h | 3,000 | 3,000 | 3,000 | ビジュアルデザイン |  |
| 12 | 2.4 | 主要ページ ビジュアルデザイン |  | 10d | 2026-07-14 A | 2026-07-28 A | 10, 11 | 100% | 2026-07-14 | 2026-07-28 | 10d |  | 小野 遥; 佐藤 健二 [30%] | 104h | 104h | 7,920 | 7,920 | 7,920 | ビジュアルデザイン |  |
| 13 | 2.5 | デザインレビュー(関係部署) |  | 2d | 2026-07-29 A | 2026-07-30 A | 12 | 100% | 2026-07-29 | 2026-07-30 | 2d |  | 新井 美香 [50%]; 佐藤 健二 [50%]; 小野 遥 | 32h | 32h | 2,560 | 2,560 | 2,560 | ビジュアルデザイン |  |
| 14 | 2.6 | デザイン修正 |  | 6d | 2026-07-31 A | 2026-08-07 A | 13 | 100% | 2026-07-31 | 2026-08-05 | 4d |  | 小野 遥 | 48h | 48h | 3,600 | 2,400 | 3,600 | ビジュアルデザイン |  |
| 15 | 2.7 | デザイン 承認 | milestone | 0d | 2026-08-07 A | 2026-08-07 A | 14 | 100% | 2026-08-05 | 2026-08-05 | 0d | 2026-08-05 |  |  |  |  |  |  | ビジュアルデザイン |  |
| 16 | 3 | **3. コンテンツ準備** |  | 49d | 2026-06-25 A | 2026-09-07 A |  | 100% | 2026-06-25 | 2026-08-31 | 44d |  |  | 141.6h | 98.63h | 14,520 | 13,584 | 11,463.6 |  |  |
| 17 | 3.1 | コンテンツ棚卸し |  | 4d | 2026-06-25 A | 2026-06-30 A | 7 | 100% | 2026-06-25 | 2026-06-30 | 4d |  | 石井 直 [50%]; 佐藤 健二 [30%] | 25.6h | 25.6h | 1,728 | 1,728 | 1,728 | コンテンツ |  |
| 18 | 3.2 | SEO キーワード設計 |  | 3d | 2026-07-02 A | 2026-07-06 A | 9 | 100% | 2026-07-02 | 2026-07-06 | 3d |  | 佐藤 健二 [40%]; 石井 直 [30%] | 16.8h | 16.8h | 1,200 | 1,200 | 1,200 | UX デザイン |  |
| 19 | 3.3 | 原稿執筆 |  | 15d | 2026-08-10 A | 2026-09-02 A | 17, 15SS | 100% | 2026-08-06 | 2026-08-26 | 12d |  | 石井 直 [50%]; 新井 美香 [10%] | 72h | 72h | 4,680 | 3,744 | 3,135.6 | コンテンツ |  |
| 20 | 3.4 | 写真撮影 |  | 2d | 2026-08-10 A | 2026-08-12 A | 15 | 100% | 2026-08-06 | 2026-08-07 | 2d |  | 小野 遥 [50%]; 撮影外注費 | 8h | 8h | 5,400 | 5,400 | 5,400 | コンテンツ |  |
| 21 | 3.5 | 原稿レビュー・承認 |  | 3d | 2026-09-03 A | 2026-09-07 A | 19 | 100% | 2026-08-27 | 2026-08-31 | 3d |  | 新井 美香 [50%]; 石井 直 [30%] | 19.2h | 19.2h | 1,512 | 1,512 |  | コンテンツ |  |
| 22 | 4 | **4. 構築** |  | 57d | 2026-06-25 A | 2026-09-17 A |  | 100% | 2026-06-25 | 2026-09-10 | 52d |  |  | 305.6h | 207.72h | 32,376 | 32,376 | 24,855.52 |  |  |
| 23 | 4.1 | CMS 構築・環境準備 |  | 4d | 2026-06-25 A | 2026-06-30 A | 7 | 100% | 2026-06-25 | 2026-06-30 | 4d |  | 中村 結衣; CMS ライセンス・ホスティング費 | 32h | 32h | 9,920 | 9,920 | 9,920 | Web 開発 |  |
| 24 | 4.2 | テンプレート開発 |  | 12d | 2026-08-10 A | 2026-08-28 A | 15, 23 | 100% | 2026-08-06 | 2026-08-26 | 12d |  | 武田 涼; 中村 結衣 [40%] | 134.4h | 134.4h | 11,424 | 11,424 | 9,481.92 | Web 開発 |  |
| 25 | 4.3 | レスポンシブ対応実装 |  | 6d | 2026-08-21 A | 2026-08-28 A | 24SS+6d | 100% | 2026-08-19 | 2026-08-26 | 6d |  | 武田 涼 | 48h | 48h | 4,080 | 4,080 | 2,733.6 | Web 開発 |  |
| 26 | 4.4 | 問い合わせフォーム実装 |  | 4d | 2026-07-01 A | 2026-07-06 A | 23 | 100% | 2026-07-01 | 2026-07-06 | 4d |  | 中村 結衣 | 32h | 32h | 2,720 | 2,720 | 2,720 | Web 開発 |  |
| 27 | 4.5 | コンテンツ入稿 |  | 8d | 2026-09-08 A | 2026-09-17 A | 24, 21, 20 | 100% | 2026-09-01 | 2026-09-10 | 8d |  | 石井 直 [50%]; 中村 結衣 [30%] | 51.2h | 51.2h | 3,552 | 3,552 |  | コンテンツ |  |
| 28 | 4.6 | アクセス解析・タグ設定 |  | 2d | 2026-09-16 A | 2026-09-17 A | 24, 18, 27FF | 100% | 2026-09-09 | 2026-09-10 | 2d |  | 武田 涼 [50%] | 8h | 8h | 680 | 680 |  | Web 開発 |  |
| 29 | 4.7 | 構築完了 | milestone | 0d | 2026-09-17 A | 2026-09-17 A | 25, 26, 27, 28 | 100% | 2026-09-10 | 2026-09-10 | 0d |  |  |  |  |  |  |  | Web 開発 |  |

Notes:
- 6: 対象範囲はコーポレートサイトのみ。採用サイトは別プロジェクトで対応する。
- 14: マーケティング部の要望によりレビューが 2 回追加となった。

| ID | WBS | Task | Type | Duration | Start | Finish | Predecessors | Complete | Remaining | Baseline start | Baseline finish | Baseline duration | Total slack | Free slack | Deadline | Resources | Work | Actual work | Cost | Baseline cost | 担当チーム |
| --- | --- | --- | --- | --- | --- | --- | --- | --- | --- | --- | --- | --- | --- | --- | --- | --- | --- | --- | --- | --- | --- |
| 30 | 5 | **5. テスト** |  | 17d | 2026-09-18 A | 2026-10-15 |  | 77% | 3.91d | 2026-09-11 | 2026-10-05 | 15d | -7d | 0d |  |  | 232.8h |  | 18,164 | 16,124 |  |
| 31 | 5.1 | 機能テスト |  | 5d | 2026-09-18 A | 2026-09-28 A | 29 | 100% |  | 2026-09-11 | 2026-09-17 | 5d |  |  |  | 藤田 翔 | 40h | 40h | 2,600 | 2,600 | 品質保証 |
| 32 | 5.2 | クロスブラウザ・端末テスト |  | 4d | 2026-09-18 A | 2026-09-25 A | 29 | 100% |  | 2026-09-11 | 2026-09-16 | 4d |  |  |  | 藤田 翔 [50%]; 武田 涼 [30%] | 25.6h | 25.6h | 1,856 | 1,856 | 品質保証 |
| 33 | 5.3 | アクセシビリティ検証 |  | 3d | 2026-09-18 A | 2026-09-24 A | 29 | 100% |  | 2026-09-11 | 2026-09-15 | 3d |  |  |  | 佐藤 健二 [50%]; 藤田 翔 [30%] | 19.2h | 19.2h | 1,428 | 1,428 | 品質保証 |
| 34 | 5.4 | 表示速度チューニング |  | 3d | 2026-09-29 A | 2026-10-01 | 31 | 90% | 0.3d | 2026-09-18 | 2026-09-24 | 3d | -3d | 4d |  | 武田 涼 [60%]; 中村 結衣 [40%] | 24h | 21.6h | 2,040 | 2,040 | Web 開発 |
| 35 | 5.5 | 不具合修正 |  | 7d | 2026-09-29 A | 2026-10-07 | 31, 32, 33 | 90% | 0.7d | 2026-09-18 | 2026-09-28 | 5d | -7d | 0d |  | 武田 涼; 中村 結衣 [50%] | 84h | 75.6h | 7,140 | 5,100 | Web 開発 |
| 36 | 5.6 | 受入テスト(UAT) |  | 5d | 2026-10-08 | 2026-10-15 | 35, 34 |  |  | 2026-09-29 | 2026-10-05 | 5d | -7d | 0d |  | 新井 美香 [50%]; 藤田 翔 [50%] | 40h |  | 3,100 | 3,100 | 品質保証 |
| 37 | 5.7 | UAT 完了承認 | milestone | 0d | 2026-10-15 | 2026-10-15 | 36 |  |  | 2026-10-05 | 2026-10-05 | 0d | -7d | 0d | 2026-10-05 |  |  |  |  |  | 品質保証 |
| 38 | 6 | **6. 公開・完了** |  | 29d | 2026-09-18 A | 2026-11-02 |  | 14% | 24.94d | 2026-09-11 | 2026-10-22 | 27d | -7d | 0d |  |  | 95.2h |  | 7,952 | 7,952 |  |
| 39 | 6.1 | DNS・本番環境準備 |  | 2d | 2026-09-18 A | 2026-09-22 A | 29 | 100% |  | 2026-09-11 | 2026-09-14 | 2d |  |  |  | 中村 結衣 [50%] | 8h | 8h | 680 | 680 | Web 開発 |
| 40 | 6.2 | Go/No-Go 判定会 |  | 1d | 2026-10-16 | 2026-10-16 | 37, 39 |  |  | 2026-10-06 | 2026-10-06 | 1d | -7d | 0d |  | 新井 美香; 藤田 翔 [50%] | 12h |  | 980 | 980 | プロジェクト管理 |
| 41 | 6.3 | 本番リリース作業 |  | 1d | 2026-10-19 | 2026-10-19 | 40 |  |  | 2026-10-07 | 2026-10-07 | 1d | -7d | 0d |  | 中村 結衣; 武田 涼 [50%] | 12h |  | 1,020 | 1,020 | Web 開発 |
| 42 | 6.4 | サイト公開 | milestone | 0d | 2026-10-19 | 2026-10-19 | 41 |  |  | 2026-10-07 | 2026-10-07 | 0d | -7d | 0d | 2026-10-07 |  |  |  |  |  | プロジェクト管理 |
| 43 | 6.5 | 公開後 監視・初期対応 |  | 5d | 2026-10-20 | 2026-10-26 | 42 |  |  | 2026-10-08 | 2026-10-15 | 5d | 0d |  |  | 中村 結衣 [40%]; 藤田 翔 [30%] | 28h |  | 2,140 | 2,140 | Web 開発 |
| 44 | 6.6 | 運用引き継ぎ |  | 3d | 2026-10-27 | 2026-10-29 | 43 | 10% |  | 2026-10-16 | 2026-10-20 | 3d | 0d |  |  | 新井 美香 [50%]; 中村 結衣 [30%] | 19.2h |  | 1,692 | 1,692 | プロジェクト管理 |
| 45 | 6.7 | プロジェクト完了報告 |  | 2d | 2026-10-30 | 2026-11-02 | 44 |  |  | 2026-10-21 | 2026-10-22 | 2d | 0d |  |  | 新井 美香 | 16h |  | 1,440 | 1,440 | プロジェクト管理 |
