# 基幹システム(ERP)刷新プログラム

Schedule from MS Project XML, 2025-10-01 to 2028-02-02, status date 2026-12-09, costs in ￥, A marks actual dates.
ERP 刷新および業務プロセス再構築
北都製造ホールディングス株式会社

## Calendars

- 標準: Mon-Fri 08:00-12:00, 13:00-17:00; Sat-Sun off. Exceptions (off unless hours are given): 2025-10-13 (スポーツの日), 2025-11-03 (文化の日), 2025-11-24 (振替休日), 2025-12-29 to 2026-01-03 (年末年始休暇), 2026-01-12 (成人の日), 2026-02-11 (建国記念の日), 2026-02-23 (天皇誕生日), 2026-03-20 (春分の日), 2026-04-29 (昭和の日), 2026-05-04 (みどりの日), 2026-05-05 (こどもの日), 2026-05-06 (振替休日), 2026-07-20 (海の日), 2026-08-11 (山の日), 2026-08-13 to 2026-08-14 (夏季休暇), 2026-09-21 (敬老の日), 2026-09-23 (秋分の日), 2026-10-12 (スポーツの日), 2026-11-03 (文化の日), 2026-11-23 (勤労感謝の日), 2026-12-29 to 2027-01-03 (年末年始休暇), 2027-01-11 (成人の日), 2027-02-11 (建国記念の日), 2027-02-23 (天皇誕生日), 2027-03-22 (振替休日), 2027-04-29 (昭和の日), 2027-05-03 (憲法記念日), 2027-05-04 (みどりの日), 2027-05-05 (こどもの日), 2027-07-19 (海の日), 2027-08-11 (山の日), 2027-08-13 to 2027-08-14 (夏季休暇), 2027-09-20 (敬老の日), 2027-09-23 (秋分の日), 2027-10-11 (スポーツの日), 2027-11-03 (文化の日), 2027-11-23 (勤労感謝の日), 2027-12-29 to 2028-01-03 (年末年始休暇), 2028-01-10 (成人の日).
- 24時間 移行作業: Mon-Sun 00:00-00:00.

## Resources

| Resource | Group | Rate |
| --- | --- | --- |
| 長谷川 邦男 | プログラム統括 | 16000 |
| 天野 茂 | プログラム管理 | 13500 |
| 菊池 理恵 | プログラム管理 | 9500 |
| 横田 圭 | プログラム管理 | 7800 |
| 杉山 徹 | 情報システム部 | 12500 |
| 小野寺 正樹 | アーキテクチャ | 13000 |
| 伊藤 直子 | 財務チーム | 11000 |
| 村上 仁 | 購買チーム | 11000 |
| 神田 翔平 | 生産チーム | 11000 |
| 山下 亜紀 | 販売チーム | 11000 |
| 馬場 敏夫 (SI パートナー) | SI パートナー | 15000 |
| 栗原 芽衣 (SI パートナー) | SI パートナー | 15000 |
| 園田 匠 (SI パートナー) | SI パートナー | 15000 |
| 半田 有里 (SI パートナー) | SI パートナー | 15000 |
| 岡崎 蓮 (SI パートナー) | SI パートナー | 15800 |
| 青木 颯太 | 開発 | 9000 |
| 池田 七海 | 開発 | 9000 |
| 内田 康平 | 開発 | 9000 |
| 榎本 澪 | 開発 | 9000 |
| 岡本 陸 | 開発 | 9000 |
| 柏木 冴 | 開発 | 9000 |
| 黒田 大和 | 開発 | 9000 |
| 佐々木 陽菜 | 開発 | 9000 |
| 谷川 治 | 基盤・インフラ | 11500 |
| 福井 奏 | 基盤・インフラ | 10200 |
| 瀬川 俊樹 | ネットワーク | 10200 |
| 星野 香織 | データ移行 | 11000 |
| 真鍋 徹 | データ移行 | 9000 |
| 八木 望 | データ移行 | 9000 |
| 若林 翔 | データ移行 | 8600 |
| 永井 千秋 | テスト管理 | 10600 |
| 寺田 悠真 | テスト | 8200 |
| 野村 茜 | テスト | 8200 |
| 平井 翼 | テスト | 7800 |
| 松田 佳奈子 | チェンジマネジメント | 10200 |
| 坂本 柚 | 教育 | 7800 |
| 中井 岳 | 教育 | 7800 |
| 冨田 塁 | セキュリティ | 12800 |
| 金子 陽菜 | セキュリティ | 11000 |
| 経理部 キーユーザー | 業務部門 | 6800 |
| 調達部 キーユーザー | 業務部門 | 6800 |
| 生産管理部 キーユーザー | 業務部門 | 6800 |
| 営業部 キーユーザー | 業務部門 | 6800 |
| ハードウェア・クラウド基盤費 | 設備投資 |  |
| ERP ソフトウェア ライセンス費 | 設備投資 |  |
| SI パートナー 一括請負費 | 外部費用 |  |
| 出張・旅費 | 外部費用 |  |
| 研修会場・教材費 | 外部費用 |  |

## Schedule

| ID | WBS | Task | Type | Duration | Start | Finish | Predecessors | Complete | Remaining | Baseline start | Baseline finish | Baseline duration | Total slack | Free slack | Constraint | Resources | Work | Actual work | Cost | Baseline cost | Actual cost | 担当チーム | 成果物 |
| --- | --- | --- | --- | --- | --- | --- | --- | --- | --- | --- | --- | --- | --- | --- | --- | --- | --- | --- | --- | --- | --- | --- | --- |
| 1 | 1 | **1. プログラム管理** |  | 509d | 2025-10-01 A | 2027-11-12 |  | 57% | 223d | 2025-10-01 | 2027-11-12 | 509d | 52d | 0d |  |  | 834.4h | 694.4h | 95,572 | 95,572 | 76,872 |  |  |
| 2 | 1.1 | PMO 立ち上げ・ガバナンス定義 |  | 10d | 2025-10-01 A | 2025-10-15 A |  | 100% |  | 2025-10-01 | 2025-10-15 | 10d |  |  |  | 天野 茂; 菊池 理恵; 横田 圭 [50%] | 200h | 200h | 21,520 | 21,520 | 21,520 | プログラム管理 |  |
| 3 | 1.2 | プログラム マスタスケジュール策定 |  | 15d | 2025-10-16 A | 2025-11-06 A | 2 | 100% |  | 2025-10-16 | 2025-11-06 | 15d |  |  |  | 天野 茂; 菊池 理恵 [80%] | 216h | 216h | 25,320 | 25,320 | 25,320 | プログラム管理 | マスタスケジュール |
| 4 | 1.3 | リスク・課題管理 整備 |  | 8d | 2025-10-16 A | 2025-10-27 A | 2 | 100% |  | 2025-10-16 | 2025-10-27 | 8d |  |  |  | 菊池 理恵 [60%]; 横田 圭 | 102.4h | 102.4h | 8,640 | 8,640 | 8,640 | プログラム管理 |  |
| 5 | 1.4 | 品質管理計画 策定 |  | 8d | 2025-10-16 A | 2025-10-27 A | 2 | 100% |  | 2025-10-16 | 2025-10-27 | 8d |  |  |  | 菊池 理恵 [50%]; 永井 千秋 [50%] | 64h | 64h | 6,432 | 6,432 | 6,432 | プログラム管理 |  |
| 6 | 1.5 | **1.5 ステアリングコミッティ** |  | 479d | 2025-11-14 A | 2027-11-12 |  | 54% | 223d | 2025-11-14 | 2027-11-12 | 479d | 52d |  |  |  | 252h | 112h | 33,660 | 33,660 | 14,960 |  |  |
| 7 | 1.5.1 | ステアリングコミッティ 第 1 回 |  | 1d | 2025-11-14 A | 2025-11-14 A |  | 100% |  | 2025-11-14 | 2025-11-14 | 1d |  |  | start no earlier than 2025-11-14 | 長谷川 邦男; 天野 茂; 菊池 理恵 [50%]; 杉山 徹 | 28h | 28h | 3,740 | 3,740 | 3,740 | プログラム管理 |  |
| 8 | 1.5.2 | ステアリングコミッティ 第 2 回 |  | 1d | 2026-02-13 A | 2026-02-13 A |  | 100% |  | 2026-02-13 | 2026-02-13 | 1d |  |  | start no earlier than 2026-02-13 | 長谷川 邦男; 天野 茂; 菊池 理恵 [50%]; 杉山 徹 | 28h | 28h | 3,740 | 3,740 | 3,740 | プログラム管理 |  |
| 9 | 1.5.3 | ステアリングコミッティ 第 3 回 |  | 1d | 2026-05-15 A | 2026-05-15 A |  | 100% |  | 2026-05-15 | 2026-05-15 | 1d |  |  | start no earlier than 2026-05-15 | 長谷川 邦男; 天野 茂; 菊池 理恵 [50%]; 杉山 徹 | 28h | 28h | 3,740 | 3,740 | 3,740 | プログラム管理 |  |
| 10 | 1.5.4 | ステアリングコミッティ 第 4 回 |  | 1d | 2026-08-17 A | 2026-08-17 A |  | 100% |  | 2026-08-17 | 2026-08-17 | 1d |  |  | start no earlier than 2026-08-14 | 長谷川 邦男; 天野 茂; 菊池 理恵 [50%]; 杉山 徹 | 28h | 28h | 3,740 | 3,740 | 3,740 | プログラム管理 |  |
| 11 | 1.5.5 | ステアリングコミッティ 第 5 回 |  | 1d | 2026-11-13 A | 2026-11-13 |  | 90% | 0.1d | 2026-11-13 | 2026-11-13 | 1d | 292d |  | start no earlier than 2026-11-13 | 長谷川 邦男; 天野 茂; 菊池 理恵 [50%]; 杉山 徹 | 28h | 25.2h | 3,740 | 3,740 |  | プログラム管理 |  |
| 12 | 1.5.6 | ステアリングコミッティ 第 6 回 |  | 1d | 2027-02-12 | 2027-02-12 |  |  |  | 2027-02-12 | 2027-02-12 | 1d | 234d |  | start no earlier than 2027-02-12 | 長谷川 邦男; 天野 茂; 菊池 理恵 [50%]; 杉山 徹 | 28h |  | 3,740 | 3,740 |  | プログラム管理 |  |
| 13 | 1.5.7 | ステアリングコミッティ 第 7 回 |  | 1d | 2027-05-14 | 2027-05-14 |  |  |  | 2027-05-14 | 2027-05-14 | 1d | 175d |  | start no earlier than 2027-05-14 | 長谷川 邦男; 天野 茂; 菊池 理恵 [50%]; 杉山 徹 | 28h |  | 3,740 | 3,740 |  | プログラム管理 |  |
| 14 | 1.5.8 | ステアリングコミッティ 第 8 回 |  | 1d | 2027-08-16 | 2027-08-16 |  |  |  | 2027-08-16 | 2027-08-16 | 1d | 112d |  | start no earlier than 2027-08-13 | 長谷川 邦男; 天野 茂; 菊池 理恵 [50%]; 杉山 徹 | 28h |  | 3,740 | 3,740 |  | プログラム管理 |  |
| 15 | 1.5.9 | ステアリングコミッティ 第 9 回 |  | 1d | 2027-11-12 | 2027-11-12 |  |  |  | 2027-11-12 | 2027-11-12 | 1d | 52d |  | start no earlier than 2027-11-12 | 長谷川 邦男; 天野 茂; 菊池 理恵 [50%]; 杉山 徹 | 28h |  | 3,740 | 3,740 |  | プログラム管理 |  |
| 16 | 2 | **2. プログラム構想・立ち上げ** |  | 113d | 2025-10-01 A | 2026-03-24 A |  | 100% |  | 2025-10-01 | 2026-03-13 | 107d |  |  |  |  | 1758.4h | 1758.4h | 10,454,152 | 10,445,368 | 10,454,152 |  |  |
| 17 | 2.1 | 投資対効果(ビジネスケース) 検証 |  | 15d | 2025-10-01 A | 2025-10-22 A |  | 100% |  | 2025-10-01 | 2025-10-22 | 15d |  |  |  | 長谷川 邦男 [30%]; 天野 茂 [80%]; 杉山 徹 [50%] | 192h | 192h | 26,220 | 26,220 | 26,220 | プログラム管理 |  |
| 18 | 2.2 | プログラム スコープ定義 |  | 10d | 2025-10-23 A | 2025-11-06 A | 17 | 100% |  | 2025-10-23 | 2025-11-06 | 10d |  |  |  | 天野 茂; 杉山 徹 [80%] | 144h | 144h | 18,800 | 18,800 | 18,800 | プログラム管理 |  |
| 19 | 2.3 | パッケージ適合性評価 |  | 15d | 2025-11-07 A | 2025-11-28 A | 18 | 100% |  | 2025-11-07 | 2025-11-28 | 15d |  |  |  | 杉山 徹 [80%]; 小野寺 正樹 | 216h | 216h | 27,600 | 27,600 | 27,600 | プログラム管理 |  |
| 20 | 2.4 | RFP 作成・発行 |  | 15d | 2025-12-01 A | 2025-12-19 A | 19 | 100% |  | 2025-12-01 | 2025-12-19 | 15d |  |  |  | 天野 茂 [60%]; 杉山 徹; 菊池 理恵 [50%] | 252h | 252h | 30,420 | 30,420 | 30,420 | プログラム管理 |  |
| 21 | 2.5 | 提案評価・ベンダー選定 |  | 20d | 2025-12-22 A | 2026-01-26 A | 20 | 100% |  | 2025-12-22 | 2026-01-26 | 20d |  |  |  | 長谷川 邦男 [20%]; 天野 茂 [80%]; 杉山 徹; 小野寺 正樹 [50%] | 400h | 400h | 52,800 | 52,800 | 52,800 | プログラム管理 |  |
| 22 | 2.6 | 契約交渉 |  | 21d | 2026-01-27 A | 2026-02-26 A | 21 | 100% |  | 2026-01-27 | 2026-02-17 | 15d |  |  |  | 長谷川 邦男 [30%]; 天野 茂 | 218.4h | 218.4h | 30,744 | 21,960 | 30,744 | プログラム管理 |  |
| 23 | 2.7 | 契約 締結 | milestone | 0d | 2026-02-26 A | 2026-02-26 A | 22 | 100% |  | 2026-02-17 | 2026-02-17 | 0d |  |  |  | SI パートナー 一括請負費 |  |  | 6,300,000 | 6,300,000 | 6,300,000 | プログラム管理 |  |
| 24 | 2.8 | ERP ライセンス調達 |  | 10d | 2026-02-27 A | 2026-03-12 A | 23 | 100% |  | 2026-02-18 | 2026-03-04 | 10d |  |  |  | 杉山 徹 [30%]; ERP ソフトウェア ライセンス費 | 24h | 24h | 3,903,000 | 3,903,000 | 3,903,000 | プログラム管理 |  |
| 25 | 2.9 | 体制立ち上げ・要員確保 |  | 15d | 2026-02-27 A | 2026-03-19 A | 23 | 100% |  | 2026-02-18 | 2026-03-11 | 15d |  |  |  | 天野 茂 [50%]; 菊池 理恵 [80%]; 杉山 徹 [50%] | 216h | 216h | 24,720 | 24,720 | 24,720 | プログラム管理 |  |
| 26 | 2.10 | プログラム キックオフ |  | 2d | 2026-03-23 A | 2026-03-24 A | 25, 3 | 100% |  | 2026-03-12 | 2026-03-13 | 2d |  |  |  | 長谷川 邦男; 天野 茂; 菊池 理恵; 杉山 徹; 小野寺 正樹; 岡崎 蓮 (SI パートナー); 出張・旅費 | 96h | 96h | 39,848 | 39,848 | 39,848 | プログラム管理 |  |
| 27 | 2.11 | プログラム開始 | milestone | 0d | 2026-03-24 A | 2026-03-24 A | 26 | 100% |  | 2026-03-13 | 2026-03-13 | 0d |  |  |  |  |  |  |  |  |  | プログラム管理 |  |

Notes:
- 22: 構築フェーズの一括請負範囲の調整に想定より 3 週間を要した。

| ID | WBS | Task | Type | Duration | Start | Finish | Predecessors | Complete | Baseline start | Baseline finish | Baseline duration | Resources | Work | Actual work | Cost | Baseline cost | Actual cost | 担当チーム | 成果物 |
| --- | --- | --- | --- | --- | --- | --- | --- | --- | --- | --- | --- | --- | --- | --- | --- | --- | --- | --- | --- |
| 28 | 3 | **3. 技術基盤・インフラ** |  | 113d | 2026-03-25 A | 2026-09-09 A |  | 100% | 2026-03-16 | 2026-09-01 | 113d |  | 2133.6h | 1953.6h | 2,429,499.2 | 2,429,499.2 | 2,408,089.6 |  |  |
| 29 | 3.1 | 技術方式設計 |  | 20d | 2026-03-25 A | 2026-04-21 A | 27 | 100% | 2026-03-16 | 2026-04-13 | 20d | 小野寺 正樹; 岡崎 蓮 (SI パートナー); 杉山 徹 [30%] | 368h | 368h | 52,080 | 52,080 | 52,080 | インフラ |  |
| 30 | 3.2 | サイジング・容量設計 |  | 10d | 2026-04-22 A | 2026-05-11 A | 29 | 100% | 2026-04-14 | 2026-04-27 | 10d | 小野寺 正樹 [50%]; 谷川 治 | 120h | 120h | 14,400 | 14,400 | 14,400 | インフラ |  |
| 31 | 3.3 | ネットワーク・WAN 設計 |  | 12d | 2026-04-22 A | 2026-05-13 A | 29 | 100% | 2026-04-14 | 2026-04-30 | 12d | 瀬川 俊樹 | 96h | 96h | 9,792 | 9,792 | 9,792 | インフラ |  |
| 32 | 3.4 | セキュリティ・権限方針策定 |  | 15d | 2026-04-22 A | 2026-05-18 A | 29 | 100% | 2026-04-14 | 2026-05-08 | 15d | 冨田 塁; 金子 陽菜 [50%]; 小野寺 正樹 [30%] | 216h | 216h | 26,640 | 26,640 | 26,640 | セキュリティ |  |
| 33 | 3.5 | ハードウェア・クラウド調達 |  | 25d | 2026-05-12 A | 2026-06-15 A | 30 | 100% | 2026-04-28 | 2026-06-05 | 25d | 谷川 治 [40%]; 杉山 徹 [20%]; ハードウェア・クラウド基盤費 | 120h | 120h | 2,189,200 | 2,189,200 | 2,189,200 | インフラ |  |
| 34 | 3.6 | サンドボックス環境構築 |  | 10d | 2026-04-22 A | 2026-05-11 A | 24, 29 | 100% | 2026-04-14 | 2026-04-27 | 10d | 谷川 治; 福井 奏 [50%] | 120h | 120h | 13,280 | 13,280 | 13,280 | インフラ |  |
| 35 | 3.7 | 開発環境 構築 |  | 12d | 2026-06-16 A | 2026-07-01 A | 33, 34 | 100% | 2026-06-08 | 2026-06-23 | 12d | 谷川 治; 福井 奏 | 192h | 192h | 20,832 | 20,832 | 20,832 | インフラ |  |
| 36 | 3.8 | 品質保証(QA)環境 構築 |  | 12d | 2026-07-02 A | 2026-07-17 A | 35 | 100% | 2026-06-24 | 2026-07-09 | 12d | 福井 奏; 岡崎 蓮 (SI パートナー) [30%] | 124.8h | 124.8h | 14,342.4 | 14,342.4 | 14,342.4 | インフラ |  |
| 37 | 3.9 | 本番環境 構築 |  | 18d | 2026-07-21 A | 2026-08-18 A | 36 | 100% | 2026-07-10 | 2026-08-05 | 18d | 谷川 治; 福井 奏 [80%]; 岡崎 蓮 (SI パートナー) [30%] | 302.4h | 302.4h | 35,136 | 35,136 | 35,136 | インフラ |  |
| 38 | 3.10 | DR サイト構築 |  | 15d | 2026-08-19 A | 2026-09-08 A | 37 | 100% | 2026-08-06 | 2026-08-31 | 15d | 谷川 治 [60%]; 瀬川 俊樹 [50%] | 132h | 132h | 14,400 | 14,400 | 5,760 | インフラ |  |
| 39 | 3.11 | 移送経路・変更管理 設定 |  | 6d | 2026-07-21 A | 2026-07-28 A | 36 | 100% | 2026-07-10 | 2026-07-17 | 6d | 福井 奏 [60%] | 28.8h | 28.8h | 2,937.6 | 2,937.6 | 2,937.6 | インフラ |  |
| 40 | 3.12 | バックアップ・リストア設計 |  | 8d | 2026-07-28 A | 2026-08-06 A | 37SS+5d | 100% | 2026-07-17 | 2026-07-29 | 8d | 谷川 治 [50%] | 32h | 32h | 3,680 | 3,680 | 3,680 | インフラ |  |
| 41 | 3.13 | システム監視 設定 |  | 8d | 2026-08-19 A | 2026-08-28 A | 37 | 100% | 2026-08-06 | 2026-08-20 | 8d | 福井 奏 [60%]; 瀬川 俊樹 [30%] | 57.6h | 57.6h | 5,875.2 | 5,875.2 | 4,406.4 | インフラ |  |
| 42 | 3.14 | ID 管理基盤 連携 |  | 10d | 2026-07-21 A | 2026-08-03 A | 32, 36 | 100% | 2026-07-10 | 2026-07-24 | 10d | 金子 陽菜 [50%]; 福井 奏 [50%] | 80h | 80h | 8,480 | 8,480 | 8,480 | セキュリティ |  |
| 43 | 3.15 | セキュリティ ハードニング |  | 10d | 2026-08-19 A | 2026-09-01 A | 37, 42 | 100% | 2026-08-06 | 2026-08-24 | 10d | 冨田 塁 [80%]; 谷川 治 [40%] | 96h | 96h | 11,872 | 11,872 | 7,123.2 | セキュリティ |  |
| 44 | 3.16 | 性能ベースライン測定 |  | 6d | 2026-09-02 A | 2026-09-09 A | 43 | 100% | 2026-08-25 | 2026-09-01 | 6d | 谷川 治 [50%]; 岡崎 蓮 (SI パートナー) [50%] | 48h | 48h | 6,552 | 6,552 |  | インフラ |  |
| 45 | 3.17 | 技術基盤 準備完了 | milestone | 0d | 2026-09-09 A | 2026-09-09 A | 44, 41, 40, 38, 39 | 100% | 2026-09-01 | 2026-09-01 | 0d |  |  |  |  |  |  | インフラ |  |
| 46 | 4 | **4. 業務設計(ブループリント)** |  | 73.5d | 2026-03-25 A | 2026-07-10 A |  | 100% | 2026-03-16 | 2026-06-29 | 71d |  | 4992h | 4992h | 599,076 | 591,140 | 599,076 |  |  |
| 47 | 4.1 | ブループリント準備・ワークショップ計画 |  | 8d | 2026-03-25 A | 2026-04-03 A | 27 | 100% | 2026-03-16 | 2026-03-26 | 8d | 天野 茂 [30%]; 岡崎 蓮 (SI パートナー) [50%]; 横田 圭 [50%] | 83.2h | 83.2h | 10,144 | 10,144 | 10,144 | 業務設計 |  |
| 48 | 4.2 | **業務設計 - 財務・管理会計** |  | 58d | 2026-04-06 A | 2026-06-30 A |  | 100% | 2026-03-27 | 2026-06-22 | 58d |  | 1191.2h | 1191.2h | 142,724 | 142,724 | 142,724 |  |  |
| 49 | 4.2.1 | 現行業務の可視化 - 財務・管理会計 |  | 12d | 2026-04-06 A | 2026-04-21 A | 47 | 100% | 2026-03-27 | 2026-04-13 | 12d | 伊藤 直子; 経理部 キーユーザー; 馬場 敏夫 (SI パートナー) [50%] | 240h | 240h | 24,288 | 24,288 | 24,288 | 業務設計 |  |
| 50 | 4.2.2 | Fit&Gap ワークショップ - 財務・管理会計 |  | 15d | 2026-04-22 A | 2026-05-18 A | 49 | 100% | 2026-04-14 | 2026-05-08 | 15d | 馬場 敏夫 (SI パートナー); 伊藤 直子; 経理部 キーユーザー [150%]; 出張・旅費 | 420h | 420h | 56,940 | 56,940 | 56,940 | 業務設計 |  |
| 51 | 4.2.3 | To-Be 業務設計 - 財務・管理会計 |  | 15d | 2026-05-19 A | 2026-06-08 A | 50 | 100% | 2026-05-11 | 2026-05-29 | 15d | 馬場 敏夫 (SI パートナー); 伊藤 直子; 経理部 キーユーザー [80%] | 336h | 336h | 37,728 | 37,728 | 37,728 | 業務設計 |  |
| 52 | 4.2.4 | ギャップ対応方針 決定 - 財務・管理会計 |  | 6d | 2026-06-09 A | 2026-06-16 A | 51 | 100% | 2026-06-01 | 2026-06-08 | 6d | 伊藤 直子 [80%]; 小野寺 正樹 [30%]; 杉山 徹 [30%] | 67.2h | 67.2h | 7,896 | 7,896 | 7,896 | 業務設計 |  |
| 53 | 4.2.5 | ブループリント文書化 - 財務・管理会計 |  | 10d | 2026-06-17 A | 2026-06-30 A | 52 | 100% | 2026-06-09 | 2026-06-22 | 10d | 馬場 敏夫 (SI パートナー) [80%]; 伊藤 直子 [50%]; 横田 圭 [30%] | 128h | 128h | 15,872 | 15,872 | 15,872 | 業務設計 | ブループリント文書 |
| 54 | 4.2.6 | ブループリント承認 - 財務・管理会計 | milestone | 0d | 2026-06-30 A | 2026-06-30 A | 53 | 100% | 2026-06-22 | 2026-06-22 | 0d |  |  |  |  |  |  | 業務設計 |  |

Notes:
- 33: ストレージの納期は発注から 12 週間。

| ID | WBS | Task | Type | Duration | Start | Finish | Predecessors | Complete | Remaining | Baseline start | Baseline finish | Baseline duration | Total slack | Free slack | Deadline | Resources | Work | Actual work | Cost | Baseline cost | Actual cost | 担当チーム | 成果物 |
| --- | --- | --- | --- | --- | --- | --- | --- | --- | --- | --- | --- | --- | --- | --- | --- | --- | --- | --- | --- | --- | --- | --- | --- |
| 55 | 4.3 | **業務設計 - 購買・在庫管理** |  | 58d | 2026-04-06 A | 2026-06-30 A |  | 100% |  | 2026-03-27 | 2026-06-22 | 58d |  |  |  |  | 1191.2h | 1191.2h | 142,724 | 142,724 | 142,724 |  |  |
| 56 | 4.3.1 | 現行業務の可視化 - 購買・在庫管理 |  | 12d | 2026-04-06 A | 2026-04-21 A | 47 | 100% |  | 2026-03-27 | 2026-04-13 | 12d |  |  |  | 村上 仁; 調達部 キーユーザー; 栗原 芽衣 (SI パートナー) [50%] | 240h | 240h | 24,288 | 24,288 | 24,288 | 業務設計 |  |
| 57 | 4.3.2 | Fit&Gap ワークショップ - 購買・在庫管理 |  | 15d | 2026-04-22 A | 2026-05-18 A | 56 | 100% |  | 2026-04-14 | 2026-05-08 | 15d |  |  |  | 栗原 芽衣 (SI パートナー); 村上 仁; 調達部 キーユーザー [150%]; 出張・旅費 | 420h | 420h | 56,940 | 56,940 | 56,940 | 業務設計 |  |
| 58 | 4.3.3 | To-Be 業務設計 - 購買・在庫管理 |  | 15d | 2026-05-19 A | 2026-06-08 A | 57 | 100% |  | 2026-05-11 | 2026-05-29 | 15d |  |  |  | 栗原 芽衣 (SI パートナー); 村上 仁; 調達部 キーユーザー [80%] | 336h | 336h | 37,728 | 37,728 | 37,728 | 業務設計 |  |
| 59 | 4.3.4 | ギャップ対応方針 決定 - 購買・在庫管理 |  | 6d | 2026-06-09 A | 2026-06-16 A | 58 | 100% |  | 2026-06-01 | 2026-06-08 | 6d |  |  |  | 村上 仁 [80%]; 小野寺 正樹 [30%]; 杉山 徹 [30%] | 67.2h | 67.2h | 7,896 | 7,896 | 7,896 | 業務設計 |  |
| 60 | 4.3.5 | ブループリント文書化 - 購買・在庫管理 |  | 10d | 2026-06-17 A | 2026-06-30 A | 59 | 100% |  | 2026-06-09 | 2026-06-22 | 10d |  |  |  | 栗原 芽衣 (SI パートナー) [80%]; 村上 仁 [50%]; 横田 圭 [30%] | 128h | 128h | 15,872 | 15,872 | 15,872 | 業務設計 | ブループリント文書 |
| 61 | 4.3.6 | ブループリント承認 - 購買・在庫管理 | milestone | 0d | 2026-06-30 A | 2026-06-30 A | 60 | 100% |  | 2026-06-22 | 2026-06-22 | 0d |  |  |  |  |  |  |  |  |  | 業務設計 |  |
| 62 | 4.4 | **業務設計 - 生産管理** |  | 60.5d | 2026-04-06 A | 2026-07-03 A |  | 100% |  | 2026-03-27 | 2026-06-22 | 58d |  |  |  |  | 1223.2h | 1223.2h | 146,692 | 142,724 | 146,692 |  |  |
| 63 | 4.4.1 | 現行業務の可視化 - 生産管理 |  | 12d | 2026-04-06 A | 2026-04-21 A | 47 | 100% |  | 2026-03-27 | 2026-04-13 | 12d |  |  |  | 神田 翔平; 生産管理部 キーユーザー; 園田 匠 (SI パートナー) [50%] | 240h | 240h | 24,288 | 24,288 | 24,288 | 業務設計 |  |
| 64 | 4.4.2 | Fit&Gap ワークショップ - 生産管理 |  | 15d | 2026-04-22 A | 2026-05-18 A | 63 | 100% |  | 2026-04-14 | 2026-05-08 | 15d |  |  |  | 園田 匠 (SI パートナー); 神田 翔平; 生産管理部 キーユーザー [150%]; 出張・旅費 | 420h | 420h | 56,940 | 56,940 | 56,940 | 業務設計 |  |
| 65 | 4.4.3 | To-Be 業務設計 - 生産管理 |  | 15d | 2026-05-19 A | 2026-06-08 A | 64 | 100% |  | 2026-05-11 | 2026-05-29 | 15d |  |  |  | 園田 匠 (SI パートナー); 神田 翔平; 生産管理部 キーユーザー [80%] | 336h | 336h | 37,728 | 37,728 | 37,728 | 業務設計 |  |
| 66 | 4.4.4 | ギャップ対応方針 決定 - 生産管理 |  | 6d | 2026-06-09 A | 2026-06-16 A | 65 | 100% |  | 2026-06-01 | 2026-06-08 | 6d |  |  |  | 神田 翔平 [80%]; 小野寺 正樹 [30%]; 杉山 徹 [30%] | 67.2h | 67.2h | 7,896 | 7,896 | 7,896 | 業務設計 |  |
| 67 | 4.4.5 | ブループリント文書化 - 生産管理 |  | 12.5d | 2026-06-17 A | 2026-07-03 A | 66 | 100% |  | 2026-06-09 | 2026-06-22 | 10d |  |  |  | 園田 匠 (SI パートナー) [80%]; 神田 翔平 [50%]; 横田 圭 [30%] | 160h | 160h | 19,840 | 15,872 | 19,840 | 業務設計 | ブループリント文書 |
| 68 | 4.4.6 | ブループリント承認 - 生産管理 | milestone | 0d | 2026-07-03 A | 2026-07-03 A | 67 | 100% |  | 2026-06-22 | 2026-06-22 | 0d |  |  |  |  |  |  |  |  |  | 業務設計 |  |
| 69 | 4.5 | **業務設計 - 販売・物流** |  | 60.5d | 2026-04-06 A | 2026-07-03 A |  | 100% |  | 2026-03-27 | 2026-06-22 | 58d |  |  |  |  | 1223.2h | 1223.2h | 146,692 | 142,724 | 146,692 |  |  |
| 70 | 4.5.1 | 現行業務の可視化 - 販売・物流 |  | 12d | 2026-04-06 A | 2026-04-21 A | 47 | 100% |  | 2026-03-27 | 2026-04-13 | 12d |  |  |  | 山下 亜紀; 営業部 キーユーザー; 半田 有里 (SI パートナー) [50%] | 240h | 240h | 24,288 | 24,288 | 24,288 | 業務設計 |  |
| 71 | 4.5.2 | Fit&Gap ワークショップ - 販売・物流 |  | 15d | 2026-04-22 A | 2026-05-18 A | 70 | 100% |  | 2026-04-14 | 2026-05-08 | 15d |  |  |  | 半田 有里 (SI パートナー); 山下 亜紀; 営業部 キーユーザー [150%]; 出張・旅費 | 420h | 420h | 56,940 | 56,940 | 56,940 | 業務設計 |  |
| 72 | 4.5.3 | To-Be 業務設計 - 販売・物流 |  | 15d | 2026-05-19 A | 2026-06-08 A | 71 | 100% |  | 2026-05-11 | 2026-05-29 | 15d |  |  |  | 半田 有里 (SI パートナー); 山下 亜紀; 営業部 キーユーザー [80%] | 336h | 336h | 37,728 | 37,728 | 37,728 | 業務設計 |  |
| 73 | 4.5.4 | ギャップ対応方針 決定 - 販売・物流 |  | 6d | 2026-06-09 A | 2026-06-16 A | 72 | 100% |  | 2026-06-01 | 2026-06-08 | 6d |  |  |  | 山下 亜紀 [80%]; 小野寺 正樹 [30%]; 杉山 徹 [30%] | 67.2h | 67.2h | 7,896 | 7,896 | 7,896 | 業務設計 |  |
| 74 | 4.5.5 | ブループリント文書化 - 販売・物流 |  | 12.5d | 2026-06-17 A | 2026-07-03 A | 73 | 100% |  | 2026-06-09 | 2026-06-22 | 10d |  |  |  | 半田 有里 (SI パートナー) [80%]; 山下 亜紀 [50%]; 横田 圭 [30%] | 160h | 160h | 19,840 | 15,872 | 19,840 | 業務設計 | ブループリント文書 |
| 75 | 4.5.6 | ブループリント承認 - 販売・物流 | milestone | 0d | 2026-07-03 A | 2026-07-03 A | 74 | 100% |  | 2026-06-22 | 2026-06-22 | 0d |  |  |  |  |  |  |  |  |  | 業務設計 |  |
| 76 | 4.6 | ブループリント 品質ゲート |  | 5d | 2026-07-03 A | 2026-07-10 A | 54, 61, 68, 75 | 100% |  | 2026-06-23 | 2026-06-29 | 5d |  |  |  | 長谷川 邦男 [20%]; 天野 茂 [80%]; 菊池 理恵 [50%]; 小野寺 正樹 [50%] | 80h | 80h | 10,100 | 10,100 | 10,100 | プログラム管理 |  |
| 77 | 4.7 | 業務設計フェーズ 完了 | milestone | 0d | 2026-07-10 A | 2026-07-10 A | 76 | 100% |  | 2026-06-29 | 2026-06-29 | 0d |  |  | 2026-06-29 |  |  |  |  |  |  | 業務設計 |  |
| 78 | 5 | **5. 構築(リアライゼーション)** |  | 116d | 2026-07-01 A | 2026-12-22 |  | 89% | 12.76d | 2026-06-23 | 2026-12-07 | 111d | -16d | 0d |  |  | 8332h | 2228.93h | 894,284.8 | 874,764.8 | 217,779.07 |  |  |
| 79 | 5.1 | **構築 - 財務・管理会計** |  | 116d | 2026-07-01 A | 2026-12-22 |  | 90% | 11.6d | 2026-06-23 | 2026-12-07 | 111d | -16d | 0d |  |  | 2224h | 586.95h | 238,211.2 | 218,691.2 | 57,092.74 |  |  |
| 80 | 5.1.1 | ベースライン設定 - 財務・管理会計 |  | 20d | 2026-09-10 A | 2026-10-09 A | 54, 45 | 100% |  | 2026-09-02 | 2026-10-01 | 20d |  |  |  | 馬場 敏夫 (SI パートナー); 伊藤 直子 [50%] | 240h | 240h | 32,800 | 32,800 |  | 構築(コンフィグ) |  |
| 81 | 5.1.2 | マスタデータ設計 - 財務・管理会計 |  | 12d | 2026-09-17 A | 2026-10-06 A | 80SS+5d | 100% |  | 2026-09-09 | 2026-09-28 | 12d |  |  |  | 伊藤 直子 [60%]; 経理部 キーユーザー [80%]; 星野 香織 [30%] | 163.2h | 163.2h | 14,726.4 | 14,726.4 |  | 構築(コンフィグ) |  |
| 82 | 5.1.3 | 権限ロール設計 - 財務・管理会計 |  | 10d | 2026-10-13 A | 2026-10-26 A | 80, 32 | 100% |  | 2026-10-02 | 2026-10-16 | 10d |  |  |  | 金子 陽菜 [40%]; 伊藤 直子 [30%]; 馬場 敏夫 (SI パートナー) [30%] | 80h | 80h | 9,760 | 9,760 |  | セキュリティ |  |
| 83 | 5.1.4 | 詳細設定(コンフィグ) - 財務・管理会計 |  | 30d | 2026-10-13 A | 2026-11-25 A | 80, 81 | 100% |  | 2026-10-02 | 2026-11-09 | 25d |  |  |  | 馬場 敏夫 (SI パートナー); 伊藤 直子 [80%]; 経理部 キーユーザー [50%] | 552h | 552h | 65,280 | 54,400 |  | 構築(コンフィグ) |  |
| 84 | 5.1.5 | アドオン仕様書 作成 - 財務・管理会計 |  | 15d | 2026-07-01 A | 2026-07-22 A | 54 | 100% |  | 2026-06-23 | 2026-07-13 | 15d |  |  |  | 馬場 敏夫 (SI パートナー) [50%]; 青木 颯太; 伊藤 直子 [30%] | 216h | 216h | 23,760 | 23,760 | 23,760 | 開発 | アドオン仕様書 |
| 85 | 5.1.6 | アドオン開発 - 財務・管理会計 |  | 36d | 2026-07-23 A | 2026-09-15 A | 84, 35 | 100% |  | 2026-07-14 | 2026-08-28 | 30d |  |  |  | 青木 颯太; 池田 七海 | 576h | 576h | 51,840 | 43,200 | 31,622.4 | 開発 |  |
| 86 | 5.1.7 | 単体テスト - 財務・管理会計 |  | 12d | 2026-08-25 A | 2026-09-09 A | 85SS+20d | 100% |  | 2026-08-17 | 2026-09-01 | 12d |  |  |  | 池田 七海 [80%]; 寺田 悠真 [40%] | 115.2h | 115.2h | 10,060.8 | 10,060.8 | 1,710.34 | テスト |  |
| 87 | 5.1.8 | プレイバック(業務確認会) - 財務・管理会計 |  | 4d | 2026-11-26 A | 2026-12-01 | 83 | 90% | 0.4d | 2026-11-10 | 2026-11-13 | 4d | -16d | 0d |  | 伊藤 直子 [80%]; 経理部 キーユーザー [150%]; 馬場 敏夫 (SI パートナー) [50%] | 89.6h | 80.63h | 8,480 | 8,480 |  | 構築(コンフィグ) |  |
| 88 | 5.1.9 | モジュール結合テスト - 財務・管理会計 |  | 15d | 2026-12-02 | 2026-12-22 | 86, 87, 82 |  |  | 2026-11-16 | 2026-12-07 | 15d | -16d | 0d |  | 寺田 悠真 [60%]; 伊藤 直子 [50%]; 馬場 敏夫 (SI パートナー) [50%] | 192h |  | 21,504 | 21,504 |  | テスト |  |
| 89 | 5.1.10 | モジュール構築完了 - 財務・管理会計 | milestone | 0d | 2026-12-22 | 2026-12-22 | 88 |  |  | 2026-12-07 | 2026-12-07 | 0d | -16d | 0d |  |  |  |  |  |  |  | 構築(コンフィグ) |  |

| ID | WBS | Task | Type | Duration | Start | Finish | Predecessors | Complete | Remaining | Baseline start | Baseline finish | Baseline duration | Total slack | Free slack | Resources | Work | Actual work | Cost | Baseline cost | Actual cost | 担当チーム | 成果物 |
| --- | --- | --- | --- | --- | --- | --- | --- | --- | --- | --- | --- | --- | --- | --- | --- | --- | --- | --- | --- | --- | --- | --- |
| 90 | 5.2 | **構築 - 購買・在庫管理** |  | 111d | 2026-07-01 A | 2026-12-15 |  | 89% | 12.21d | 2026-06-23 | 2026-12-07 | 111d | -11d | 0d |  | 2036h | 585.98h | 218,691.2 | 218,691.2 | 57,006.34 |  |  |
| 91 | 5.2.1 | ベースライン設定 - 購買・在庫管理 |  | 20d | 2026-09-10 A | 2026-10-09 A | 61, 45 | 100% |  | 2026-09-02 | 2026-10-01 | 20d |  |  | 栗原 芽衣 (SI パートナー); 村上 仁 [50%] | 240h | 240h | 32,800 | 32,800 |  | 構築(コンフィグ) |  |
| 92 | 5.2.2 | マスタデータ設計 - 購買・在庫管理 |  | 12d | 2026-09-17 A | 2026-10-06 A | 91SS+5d | 100% |  | 2026-09-09 | 2026-09-28 | 12d |  |  | 村上 仁 [60%]; 調達部 キーユーザー [80%]; 星野 香織 [30%] | 163.2h | 163.2h | 14,726.4 | 14,726.4 |  | 構築(コンフィグ) |  |
| 93 | 5.2.3 | 権限ロール設計 - 購買・在庫管理 |  | 10d | 2026-10-13 A | 2026-10-26 A | 91, 32 | 100% |  | 2026-10-02 | 2026-10-16 | 10d |  |  | 金子 陽菜 [40%]; 村上 仁 [30%]; 栗原 芽衣 (SI パートナー) [30%] | 80h | 80h | 9,760 | 9,760 |  | セキュリティ |  |
| 94 | 5.2.4 | 詳細設定(コンフィグ) - 購買・在庫管理 |  | 25d | 2026-10-13 A | 2026-11-17 A | 91, 92 | 100% |  | 2026-10-02 | 2026-11-09 | 25d |  |  | 栗原 芽衣 (SI パートナー); 村上 仁 [80%]; 調達部 キーユーザー [50%] | 460h | 460h | 54,400 | 54,400 |  | 構築(コンフィグ) |  |
| 95 | 5.2.5 | アドオン仕様書 作成 - 購買・在庫管理 |  | 15d | 2026-07-01 A | 2026-07-22 A | 61 | 100% |  | 2026-06-23 | 2026-07-13 | 15d |  |  | 栗原 芽衣 (SI パートナー) [50%]; 内田 康平; 村上 仁 [30%] | 216h | 216h | 23,760 | 23,760 | 23,760 | 開発 | アドオン仕様書 |
| 96 | 5.2.6 | アドオン開発 - 購買・在庫管理 |  | 30d | 2026-07-23 A | 2026-09-07 A | 95, 35 | 100% |  | 2026-07-14 | 2026-08-28 | 30d |  |  | 内田 康平; 榎本 澪 | 480h | 480h | 43,200 | 43,200 | 31,536 | 開発 |  |
| 97 | 5.2.7 | 単体テスト - 購買・在庫管理 |  | 12d | 2026-08-25 A | 2026-09-09 A | 96SS+20d | 100% |  | 2026-08-17 | 2026-09-01 | 12d |  |  | 榎本 澪 [80%]; 寺田 悠真 [40%] | 115.2h | 115.2h | 10,060.8 | 10,060.8 | 1,710.34 | テスト |  |
| 98 | 5.2.8 | プレイバック(業務確認会) - 購買・在庫管理 |  | 4d | 2026-11-18 A | 2026-11-24 | 94 | 90% | 0.4d | 2026-11-10 | 2026-11-13 | 4d | -11d | 0d | 村上 仁 [80%]; 調達部 キーユーザー [150%]; 栗原 芽衣 (SI パートナー) [50%] | 89.6h | 80.63h | 8,480 | 8,480 |  | 構築(コンフィグ) |  |
| 99 | 5.2.9 | モジュール結合テスト - 購買・在庫管理 |  | 15d | 2026-11-25 | 2026-12-15 | 97, 98, 93 |  |  | 2026-11-16 | 2026-12-07 | 15d | -11d | 0d | 寺田 悠真 [60%]; 村上 仁 [50%]; 栗原 芽衣 (SI パートナー) [50%] | 192h |  | 21,504 | 21,504 |  | テスト |  |
| 100 | 5.2.10 | モジュール構築完了 - 購買・在庫管理 | milestone | 0d | 2026-12-15 | 2026-12-15 | 99 |  |  | 2026-12-07 | 2026-12-07 | 0d | -11d | 5d |  |  |  |  |  |  | 構築(コンフィグ) |  |
| 101 | 5.3 | **構築 - 生産管理** |  | 108.5d | 2026-07-03 A | 2026-12-15 |  | 89% | 11.94d | 2026-06-23 | 2026-12-07 | 111d | -11d | 0d |  | 2036h | 528h | 218,691.2 | 218,691.2 | 51,840 |  |  |
| 102 | 5.3.1 | ベースライン設定 - 生産管理 |  | 20d | 2026-09-10 A | 2026-10-09 A | 68, 45 | 100% |  | 2026-09-02 | 2026-10-01 | 20d |  |  | 園田 匠 (SI パートナー); 神田 翔平 [50%] | 240h | 240h | 32,800 | 32,800 |  | 構築(コンフィグ) |  |
| 103 | 5.3.2 | マスタデータ設計 - 生産管理 |  | 12d | 2026-09-17 A | 2026-10-06 A | 102SS+5d | 100% |  | 2026-09-09 | 2026-09-28 | 12d |  |  | 神田 翔平 [60%]; 生産管理部 キーユーザー [80%]; 星野 香織 [30%] | 163.2h | 163.2h | 14,726.4 | 14,726.4 |  | 構築(コンフィグ) |  |
| 104 | 5.3.3 | 権限ロール設計 - 生産管理 |  | 10d | 2026-10-13 A | 2026-10-26 A | 102, 32 | 100% |  | 2026-10-02 | 2026-10-16 | 10d |  |  | 金子 陽菜 [40%]; 神田 翔平 [30%]; 園田 匠 (SI パートナー) [30%] | 80h | 80h | 9,760 | 9,760 |  | セキュリティ |  |
| 105 | 5.3.4 | 詳細設定(コンフィグ) - 生産管理 |  | 25d | 2026-10-13 A | 2026-11-17 A | 102, 103 | 100% |  | 2026-10-02 | 2026-11-09 | 25d |  |  | 園田 匠 (SI パートナー); 神田 翔平 [80%]; 生産管理部 キーユーザー [50%] | 460h | 460h | 54,400 | 54,400 |  | 構築(コンフィグ) |  |
| 106 | 5.3.5 | アドオン仕様書 作成 - 生産管理 |  | 15d | 2026-07-03 A | 2026-07-27 A | 68 | 100% |  | 2026-06-23 | 2026-07-13 | 15d |  |  | 園田 匠 (SI パートナー) [50%]; 岡本 陸; 神田 翔平 [30%] | 216h | 216h | 23,760 | 23,760 | 23,760 | 開発 | アドオン仕様書 |
| 107 | 5.3.6 | アドオン開発 - 生産管理 |  | 30d | 2026-07-27 A | 2026-09-10 A | 106, 35 | 100% |  | 2026-07-14 | 2026-08-28 | 30d |  |  | 岡本 陸; 柏木 冴 | 480h | 480h | 43,200 | 43,200 | 28,080 | 開発 |  |
| 108 | 5.3.7 | 単体テスト - 生産管理 |  | 12d | 2026-08-27 A | 2026-09-14 A | 107SS+20d | 100% |  | 2026-08-17 | 2026-09-01 | 12d |  |  | 柏木 冴 [80%]; 寺田 悠真 [40%] | 115.2h | 115.2h | 10,060.8 | 10,060.8 |  | テスト |  |
| 109 | 5.3.8 | プレイバック(業務確認会) - 生産管理 |  | 4d | 2026-11-18 A | 2026-11-24 | 105 | 90% | 0.4d | 2026-11-10 | 2026-11-13 | 4d | -11d | 0d | 神田 翔平 [80%]; 生産管理部 キーユーザー [150%]; 園田 匠 (SI パートナー) [50%] | 89.6h | 80.63h | 8,480 | 8,480 |  | 構築(コンフィグ) |  |
| 110 | 5.3.9 | モジュール結合テスト - 生産管理 |  | 15d | 2026-11-25 | 2026-12-15 | 108, 109, 104 |  |  | 2026-11-16 | 2026-12-07 | 15d | -11d | 0d | 寺田 悠真 [60%]; 神田 翔平 [50%]; 園田 匠 (SI パートナー) [50%] | 192h |  | 21,504 | 21,504 |  | テスト |  |
| 111 | 5.3.10 | モジュール構築完了 - 生産管理 | milestone | 0d | 2026-12-15 | 2026-12-15 | 110 |  |  | 2026-12-07 | 2026-12-07 | 0d | -11d | 5d |  |  |  |  |  |  | 構築(コンフィグ) |  |
| 112 | 5.4 | **構築 - 販売・物流** |  | 108.5d | 2026-07-03 A | 2026-12-15 |  | 89% | 11.94d | 2026-06-23 | 2026-12-07 | 111d | -11d | 0d |  | 2036h | 528h | 218,691.2 | 218,691.2 | 51,840 |  |  |
| 113 | 5.4.1 | ベースライン設定 - 販売・物流 |  | 20d | 2026-09-10 A | 2026-10-09 A | 75, 45 | 100% |  | 2026-09-02 | 2026-10-01 | 20d |  |  | 半田 有里 (SI パートナー); 山下 亜紀 [50%] | 240h | 240h | 32,800 | 32,800 |  | 構築(コンフィグ) |  |
| 114 | 5.4.2 | マスタデータ設計 - 販売・物流 |  | 12d | 2026-09-17 A | 2026-10-06 A | 113SS+5d | 100% |  | 2026-09-09 | 2026-09-28 | 12d |  |  | 山下 亜紀 [60%]; 営業部 キーユーザー [80%]; 星野 香織 [30%] | 163.2h | 163.2h | 14,726.4 | 14,726.4 |  | 構築(コンフィグ) |  |
| 115 | 5.4.3 | 権限ロール設計 - 販売・物流 |  | 10d | 2026-10-13 A | 2026-10-26 A | 113, 32 | 100% |  | 2026-10-02 | 2026-10-16 | 10d |  |  | 金子 陽菜 [40%]; 山下 亜紀 [30%]; 半田 有里 (SI パートナー) [30%] | 80h | 80h | 9,760 | 9,760 |  | セキュリティ |  |
| 116 | 5.4.4 | 詳細設定(コンフィグ) - 販売・物流 |  | 25d | 2026-10-13 A | 2026-11-17 A | 113, 114 | 100% |  | 2026-10-02 | 2026-11-09 | 25d |  |  | 半田 有里 (SI パートナー); 山下 亜紀 [80%]; 営業部 キーユーザー [50%] | 460h | 460h | 54,400 | 54,400 |  | 構築(コンフィグ) |  |
| 117 | 5.4.5 | アドオン仕様書 作成 - 販売・物流 |  | 15d | 2026-07-03 A | 2026-07-27 A | 75 | 100% |  | 2026-06-23 | 2026-07-13 | 15d |  |  | 半田 有里 (SI パートナー) [50%]; 黒田 大和; 山下 亜紀 [30%] | 216h | 216h | 23,760 | 23,760 | 23,760 | 開発 | アドオン仕様書 |
| 118 | 5.4.6 | アドオン開発 - 販売・物流 |  | 30d | 2026-07-27 A | 2026-09-10 A | 117, 35 | 100% |  | 2026-07-14 | 2026-08-28 | 30d |  |  | 黒田 大和; 佐々木 陽菜 | 480h | 480h | 43,200 | 43,200 | 28,080 | 開発 |  |
| 119 | 5.4.7 | 単体テスト - 販売・物流 |  | 12d | 2026-08-27 A | 2026-09-14 A | 118SS+20d | 100% |  | 2026-08-17 | 2026-09-01 | 12d |  |  | 佐々木 陽菜 [80%]; 寺田 悠真 [40%] | 115.2h | 115.2h | 10,060.8 | 10,060.8 |  | テスト |  |
| 120 | 5.4.8 | プレイバック(業務確認会) - 販売・物流 |  | 4d | 2026-11-18 A | 2026-11-24 | 116 | 90% | 0.4d | 2026-11-10 | 2026-11-13 | 4d | -11d | 0d | 山下 亜紀 [80%]; 営業部 キーユーザー [150%]; 半田 有里 (SI パートナー) [50%] | 89.6h | 80.63h | 8,480 | 8,480 |  | 構築(コンフィグ) |  |
| 121 | 5.4.9 | モジュール結合テスト - 販売・物流 |  | 15d | 2026-11-25 | 2026-12-15 | 119, 120, 115 |  |  | 2026-11-16 | 2026-12-07 | 15d | -11d | 0d | 寺田 悠真 [60%]; 山下 亜紀 [50%]; 半田 有里 (SI パートナー) [50%] | 192h |  | 21,504 | 21,504 |  | テスト |  |
| 122 | 5.4.10 | モジュール構築完了 - 販売・物流 | milestone | 0d | 2026-12-15 | 2026-12-15 | 121 |  |  | 2026-12-07 | 2026-12-07 | 0d | -11d | 5d |  |  |  |  |  |  | 構築(コンフィグ) |  |

| ID | WBS | Task | Type | Duration | Start | Finish | Predecessors | Complete | Remaining | Baseline start | Baseline finish | Baseline duration | Total slack | Free slack | Resources | Work | Actual work | Cost | Baseline cost | Actual cost | 担当チーム |
| --- | --- | --- | --- | --- | --- | --- | --- | --- | --- | --- | --- | --- | --- | --- | --- | --- | --- | --- | --- | --- | --- |
| 123 | 6 | **6. インターフェース・連携** |  | 151d | 2026-04-22 A | 2026-12-07 |  | 97% | 4.53d | 2026-04-14 | 2026-11-19 | 146d | -5d | 0d |  | 1889.6h | 603.2h | 189,488 | 189,488 | 65,712 |  |
| 124 | 6.1 | 連携一覧・方式整理 |  | 10d | 2026-04-22 A | 2026-05-11 A | 29 | 100% |  | 2026-04-14 | 2026-04-27 | 10d |  |  | 小野寺 正樹 [80%]; 岡崎 蓮 (SI パートナー) [50%] | 104h | 104h | 14,640 | 14,640 | 14,640 | 開発 |
| 125 | 6.2 | **銀行決済 連携** |  | 105d | 2026-07-01 A | 2026-12-07 |  | 97% | 3.15d | 2026-06-23 | 2026-11-19 | 100d | -5d | 0d |  | 297.6h | 83.2h | 29,184 | 29,184 | 8,512 |  |
| 126 | 6.2.1 | 連携仕様設計 - 銀行決済 連携 |  | 8d | 2026-07-01 A | 2026-07-10 A | 124, 54 | 100% |  | 2026-06-23 | 2026-07-02 | 8d |  |  | 小野寺 正樹 [30%]; 青木 颯太 [80%]; 伊藤 直子 [20%] | 83.2h | 83.2h | 8,512 | 8,512 | 8,512 | 開発 |
| 127 | 6.2.2 | 連携開発 - 銀行決済 連携 |  | 15d | 2026-10-13 A | 2026-11-02 A | 126, 35, 80 | 100% |  | 2026-10-02 | 2026-10-23 | 15d |  |  | 青木 颯太; 岡崎 蓮 (SI パートナー) [20%] | 144h | 144h | 14,592 | 14,592 |  | 開発 |
| 128 | 6.2.3 | 連携疎通テスト - 銀行決済 連携 |  | 8d | 2026-11-26 A | 2026-12-07 | 127, 36, 83 | 90% | 0.8d | 2026-11-10 | 2026-11-19 | 8d | -5d | 0d | 青木 颯太 [60%]; 寺田 悠真 [50%] | 70.4h | 63.35h | 6,080 | 6,080 |  | テスト |
| 129 | 6.3 | **仕入先 EDI 連携** |  | 100d | 2026-07-01 A | 2026-11-30 |  | 97% | 3d | 2026-06-23 | 2026-11-19 | 100d | 0d | 5d |  | 297.6h | 83.2h | 29,184 | 29,184 | 8,512 |  |
| 130 | 6.3.1 | 連携仕様設計 - 仕入先 EDI 連携 |  | 8d | 2026-07-01 A | 2026-07-10 A | 124, 61 | 100% |  | 2026-06-23 | 2026-07-02 | 8d |  |  | 小野寺 正樹 [30%]; 内田 康平 [80%]; 村上 仁 [20%] | 83.2h | 83.2h | 8,512 | 8,512 | 8,512 | 開発 |
| 131 | 6.3.2 | 連携開発 - 仕入先 EDI 連携 |  | 15d | 2026-10-13 A | 2026-11-02 A | 130, 35, 91 | 100% |  | 2026-10-02 | 2026-10-23 | 15d |  |  | 内田 康平; 岡崎 蓮 (SI パートナー) [20%] | 144h | 144h | 14,592 | 14,592 |  | 開発 |
| 132 | 6.3.3 | 連携疎通テスト - 仕入先 EDI 連携 |  | 8d | 2026-11-18 A | 2026-11-30 | 131, 36, 94 | 90% | 0.8d | 2026-11-10 | 2026-11-19 | 8d | 0d | 5d | 内田 康平 [60%]; 野村 茜 [50%] | 70.4h | 63.35h | 6,080 | 6,080 |  | テスト |
| 133 | 6.4 | **倉庫管理(WMS) 連携** |  | 100d | 2026-07-01 A | 2026-11-30 |  | 97% | 3d | 2026-06-23 | 2026-11-19 | 100d | 0d | 5d |  | 297.6h | 83.2h | 29,056 | 29,056 | 8,512 |  |
| 134 | 6.4.1 | 連携仕様設計 - 倉庫管理(WMS) 連携 |  | 8d | 2026-07-01 A | 2026-07-10 A | 124, 61 | 100% |  | 2026-06-23 | 2026-07-02 | 8d |  |  | 小野寺 正樹 [30%]; 榎本 澪 [80%]; 村上 仁 [20%] | 83.2h | 83.2h | 8,512 | 8,512 | 8,512 | 開発 |
| 135 | 6.4.2 | 連携開発 - 倉庫管理(WMS) 連携 |  | 15d | 2026-10-13 A | 2026-11-02 A | 134, 35, 91 | 100% |  | 2026-10-02 | 2026-10-23 | 15d |  |  | 榎本 澪; 岡崎 蓮 (SI パートナー) [20%] | 144h | 144h | 14,592 | 14,592 |  | 開発 |
| 136 | 6.4.3 | 連携疎通テスト - 倉庫管理(WMS) 連携 |  | 8d | 2026-11-18 A | 2026-11-30 | 135, 36, 94 | 90% | 0.8d | 2026-11-10 | 2026-11-19 | 8d | 0d | 5d | 榎本 澪 [60%]; 平井 翼 [50%] | 70.4h | 63.35h | 5,952 | 5,952 |  | テスト |
| 137 | 6.5 | **製造実行(MES) 連携** |  | 97.5d | 2026-07-03 A | 2026-11-30 |  | 97% | 2.92d | 2026-06-23 | 2026-11-19 | 100d | 0d | 5d |  | 297.6h | 83.2h | 29,184 | 29,184 | 8,512 |  |
| 138 | 6.5.1 | 連携仕様設計 - 製造実行(MES) 連携 |  | 8d | 2026-07-03 A | 2026-07-15 A | 124, 68 | 100% |  | 2026-06-23 | 2026-07-02 | 8d |  |  | 小野寺 正樹 [30%]; 柏木 冴 [80%]; 神田 翔平 [20%] | 83.2h | 83.2h | 8,512 | 8,512 | 8,512 | 開発 |
| 139 | 6.5.2 | 連携開発 - 製造実行(MES) 連携 |  | 15d | 2026-10-13 A | 2026-11-02 A | 138, 35, 102 | 100% |  | 2026-10-02 | 2026-10-23 | 15d |  |  | 柏木 冴; 岡崎 蓮 (SI パートナー) [20%] | 144h | 144h | 14,592 | 14,592 |  | 開発 |
| 140 | 6.5.3 | 連携疎通テスト - 製造実行(MES) 連携 |  | 8d | 2026-11-18 A | 2026-11-30 | 139, 36, 105 | 90% | 0.8d | 2026-11-10 | 2026-11-19 | 8d | 0d | 5d | 柏木 冴 [60%]; 寺田 悠真 [50%] | 70.4h | 63.35h | 6,080 | 6,080 |  | テスト |
| 141 | 6.6 | **CRM 連携** |  | 97.5d | 2026-07-03 A | 2026-11-30 |  | 97% | 2.92d | 2026-06-23 | 2026-11-19 | 100d | 0d | 5d |  | 297.6h | 83.2h | 29,184 | 29,184 | 8,512 |  |
| 142 | 6.6.1 | 連携仕様設計 - CRM 連携 |  | 8d | 2026-07-03 A | 2026-07-15 A | 124, 75 | 100% |  | 2026-06-23 | 2026-07-02 | 8d |  |  | 小野寺 正樹 [30%]; 黒田 大和 [80%]; 山下 亜紀 [20%] | 83.2h | 83.2h | 8,512 | 8,512 | 8,512 | 開発 |
| 143 | 6.6.2 | 連携開発 - CRM 連携 |  | 15d | 2026-10-13 A | 2026-11-02 A | 142, 35, 113 | 100% |  | 2026-10-02 | 2026-10-23 | 15d |  |  | 黒田 大和; 岡崎 蓮 (SI パートナー) [20%] | 144h | 144h | 14,592 | 14,592 |  | 開発 |
| 144 | 6.6.3 | 連携疎通テスト - CRM 連携 |  | 8d | 2026-11-18 A | 2026-11-30 | 143, 36, 116 | 90% | 0.8d | 2026-11-10 | 2026-11-19 | 8d | 0d | 5d | 黒田 大和 [60%]; 野村 茜 [50%] | 70.4h | 63.35h | 6,080 | 6,080 |  | テスト |
| 145 | 6.7 | **BI・連結会計 連携** |  | 105d | 2026-07-01 A | 2026-12-07 |  | 97% | 3.15d | 2026-06-23 | 2026-11-19 | 100d | -5d | 0d |  | 297.6h | 83.2h | 29,056 | 29,056 | 8,512 |  |
| 146 | 6.7.1 | 連携仕様設計 - BI・連結会計 連携 |  | 8d | 2026-07-01 A | 2026-07-10 A | 124, 54 | 100% |  | 2026-06-23 | 2026-07-02 | 8d |  |  | 小野寺 正樹 [30%]; 池田 七海 [80%]; 伊藤 直子 [20%] | 83.2h | 83.2h | 8,512 | 8,512 | 8,512 | 開発 |
| 147 | 6.7.2 | 連携開発 - BI・連結会計 連携 |  | 15d | 2026-10-13 A | 2026-11-02 A | 146, 35, 80 | 100% |  | 2026-10-02 | 2026-10-23 | 15d |  |  | 池田 七海; 岡崎 蓮 (SI パートナー) [20%] | 144h | 144h | 14,592 | 14,592 |  | 開発 |
| 148 | 6.7.3 | 連携疎通テスト - BI・連結会計 連携 |  | 8d | 2026-11-26 A | 2026-12-07 | 147, 36, 83 | 90% | 0.8d | 2026-11-10 | 2026-11-19 | 8d | -5d | 0d | 池田 七海 [60%]; 平井 翼 [50%] | 70.4h | 63.35h | 5,952 | 5,952 |  | テスト |
| 149 | 6.8 | 連携 構築完了 | milestone | 0d | 2026-12-07 | 2026-12-07 | 128, 132, 136, 140, 144, 148 |  |  | 2026-11-19 | 2026-11-19 | 0d | -5d | 11d |  |  |  |  |  |  | 開発 |

| ID | WBS | Task | Type | Duration | Start | Finish | Predecessors | Complete | Remaining | Baseline start | Baseline finish | Baseline duration | Total slack | Free slack | Resources | Work | Actual work | Cost | Baseline cost | Actual cost | 担当チーム |
| --- | --- | --- | --- | --- | --- | --- | --- | --- | --- | --- | --- | --- | --- | --- | --- | --- | --- | --- | --- | --- | --- |
| 150 | 7 | **7. データ移行** |  | 324d | 2026-03-25 A | 2027-07-27 |  | 93% | 151d | 2026-03-16 | 2027-07-02 | 314d | -14d | 0d |  | 4251.2h | 2686.4h | 355,180.8 | 331,276.8 | 213,932.8 |  |
| 151 | 7.1 | データ移行方針策定 |  | 12d | 2026-03-25 A | 2026-04-09 A | 27 | 100% |  | 2026-03-16 | 2026-04-01 | 12d |  |  | 星野 香織; 小野寺 正樹 [30%]; 杉山 徹 [20%] | 144h | 144h | 16,704 | 16,704 | 16,704 | データ移行 |
| 152 | 7.2 | 移行ツール・基盤 構築 |  | 20d | 2026-07-02 A | 2026-07-30 A | 151, 35 | 100% |  | 2026-06-24 | 2026-07-22 | 20d |  |  | 真鍋 徹; 若林 翔 [80%] | 288h | 288h | 25,408 | 25,408 | 25,408 | データ移行 |
| 153 | 7.3 | **移行対象 - 得意先マスタ** |  | 83d | 2026-04-10 A | 2026-08-12 A |  | 100% |  | 2026-04-02 | 2026-08-03 | 83d |  |  |  | 160h | 160h | 13,952 | 13,952 | 13,952 |  |
| 154 | 7.3.1 | マッピング・抽出 - 得意先マスタ |  | 10d | 2026-04-10 A | 2026-04-23 A | 151, 47 | 100% |  | 2026-04-02 | 2026-04-15 | 10d |  |  | 真鍋 徹 [80%]; 営業部 キーユーザー [40%] | 96h | 96h | 7,936 | 7,936 | 7,936 | データ移行 |
| 155 | 7.3.2 | 投入・検証 - 得意先マスタ |  | 8d | 2026-07-31 A | 2026-08-12 A | 154, 152 | 100% |  | 2026-07-23 | 2026-08-03 | 8d |  |  | 真鍋 徹 [80%]; 星野 香織 [20%] | 64h | 64h | 6,016 | 6,016 | 6,016 | データ移行 |
| 156 | 7.4 | **移行対象 - 仕入先マスタ** |  | 83d | 2026-04-10 A | 2026-08-12 A |  | 100% |  | 2026-04-02 | 2026-08-03 | 83d |  |  |  | 160h | 160h | 13,952 | 13,952 | 13,952 |  |
| 157 | 7.4.1 | マッピング・抽出 - 仕入先マスタ |  | 10d | 2026-04-10 A | 2026-04-23 A | 151, 47 | 100% |  | 2026-04-02 | 2026-04-15 | 10d |  |  | 八木 望 [80%]; 調達部 キーユーザー [40%] | 96h | 96h | 7,936 | 7,936 | 7,936 | データ移行 |
| 158 | 7.4.2 | 投入・検証 - 仕入先マスタ |  | 8d | 2026-07-31 A | 2026-08-12 A | 157, 152 | 100% |  | 2026-07-23 | 2026-08-03 | 8d |  |  | 八木 望 [80%]; 星野 香織 [20%] | 64h | 64h | 6,016 | 6,016 | 6,016 | データ移行 |
| 159 | 7.5 | **移行対象 - 品目マスタ** |  | 83d | 2026-04-10 A | 2026-08-12 A |  | 100% |  | 2026-04-02 | 2026-08-03 | 83d |  |  |  | 160h | 160h | 13,491.2 | 13,491.2 | 13,491.2 |  |
| 160 | 7.5.1 | マッピング・抽出 - 品目マスタ |  | 10d | 2026-04-10 A | 2026-04-23 A | 151, 47 | 100% |  | 2026-04-02 | 2026-04-15 | 10d |  |  | 若林 翔 [80%]; 生産管理部 キーユーザー [40%] | 96h | 96h | 7,680 | 7,680 | 7,680 | データ移行 |
| 161 | 7.5.2 | 投入・検証 - 品目マスタ |  | 8d | 2026-07-31 A | 2026-08-12 A | 160, 152 | 100% |  | 2026-07-23 | 2026-08-03 | 8d |  |  | 若林 翔 [80%]; 星野 香織 [20%] | 64h | 64h | 5,811.2 | 5,811.2 | 5,811.2 | データ移行 |
| 162 | 7.6 | **移行対象 - 部品表・工順** |  | 18d | 2026-08-17 A | 2026-09-09 A |  | 100% |  | 2026-08-04 | 2026-09-01 | 18d |  |  |  | 160h | 76.8h | 13,952 | 13,952 | 6,348.8 |  |
| 163 | 7.6.1 | マッピング・抽出 - 部品表・工順 |  | 10d | 2026-08-17 A | 2026-08-28 A | 151, 47, 155 | 100% |  | 2026-08-04 | 2026-08-20 | 10d |  |  | 真鍋 徹 [80%]; 生産管理部 キーユーザー [40%] | 96h | 96h | 7,936 | 7,936 | 6,348.8 | データ移行 |
| 164 | 7.6.2 | 投入・検証 - 部品表・工順 |  | 8d | 2026-08-31 A | 2026-09-09 A | 163, 152 | 100% |  | 2026-08-21 | 2026-09-01 | 8d |  |  | 真鍋 徹 [80%]; 星野 香織 [20%] | 64h | 64h | 6,016 | 6,016 |  | データ移行 |
| 165 | 7.7 | **移行対象 - 未処理 受発注データ** |  | 18d | 2026-08-17 A | 2026-09-09 A |  | 100% |  | 2026-08-04 | 2026-09-01 | 18d |  |  |  | 160h | 76.8h | 13,952 | 13,952 | 6,348.8 |  |
| 166 | 7.7.1 | マッピング・抽出 - 未処理 受発注データ |  | 10d | 2026-08-17 A | 2026-08-28 A | 151, 47, 158 | 100% |  | 2026-08-04 | 2026-08-20 | 10d |  |  | 八木 望 [80%]; 営業部 キーユーザー [40%] | 96h | 96h | 7,936 | 7,936 | 6,348.8 | データ移行 |
| 167 | 7.7.2 | 投入・検証 - 未処理 受発注データ |  | 8d | 2026-08-31 A | 2026-09-09 A | 166, 152 | 100% |  | 2026-08-21 | 2026-09-01 | 8d |  |  | 八木 望 [80%]; 星野 香織 [20%] | 64h | 64h | 6,016 | 6,016 |  | データ移行 |
| 168 | 7.8 | **移行対象 - 総勘定元帳 残高** |  | 18d | 2026-08-17 A | 2026-09-09 A |  | 100% |  | 2026-08-04 | 2026-09-01 | 18d |  |  |  | 160h | 76.8h | 13,491.2 | 13,491.2 | 6,144 |  |
| 169 | 7.8.1 | マッピング・抽出 - 総勘定元帳 残高 |  | 10d | 2026-08-17 A | 2026-08-28 A | 151, 47, 161 | 100% |  | 2026-08-04 | 2026-08-20 | 10d |  |  | 若林 翔 [80%]; 経理部 キーユーザー [40%] | 96h | 96h | 7,680 | 7,680 | 6,144 | データ移行 |
| 170 | 7.8.2 | 投入・検証 - 総勘定元帳 残高 |  | 8d | 2026-08-31 A | 2026-09-09 A | 169, 152 | 100% |  | 2026-08-21 | 2026-09-01 | 8d |  |  | 若林 翔 [80%]; 星野 香織 [20%] | 64h | 64h | 5,811.2 | 5,811.2 |  | データ移行 |
| 171 | 7.9 | **移行対象 - 固定資産** |  | 18d | 2026-09-10 A | 2026-10-07 A |  | 100% |  | 2026-09-02 | 2026-09-29 | 18d |  |  |  | 160h |  | 13,952 | 13,952 |  |  |
| 172 | 7.9.1 | マッピング・抽出 - 固定資産 |  | 10d | 2026-09-10 A | 2026-09-25 A | 151, 47, 164 | 100% |  | 2026-09-02 | 2026-09-15 | 10d |  |  | 真鍋 徹 [80%]; 経理部 キーユーザー [40%] | 96h | 96h | 7,936 | 7,936 |  | データ移行 |
| 173 | 7.9.2 | 投入・検証 - 固定資産 |  | 8d | 2026-09-28 A | 2026-10-07 A | 172, 152 | 100% |  | 2026-09-16 | 2026-09-29 | 8d |  |  | 真鍋 徹 [80%]; 星野 香織 [20%] | 64h | 64h | 6,016 | 6,016 |  | データ移行 |
| 174 | 7.10 | マスタデータ クレンジング |  | 52d | 2026-04-24 A | 2026-07-10 A | 154, 157, 160 | 100% |  | 2026-04-16 | 2026-06-16 | 40d |  |  | 八木 望 [50%]; 営業部 キーユーザー; 調達部 キーユーザー; 生産管理部 キーユーザー | 1456h | 1456h | 103,584 | 79,680 | 103,584 | データ移行 |
| 175 | 7.11 | 突合(照合)ルール設計 |  | 10d | 2026-04-10 A | 2026-04-23 A | 151 | 100% |  | 2026-04-02 | 2026-04-15 | 10d |  |  | 星野 香織 [60%]; 経理部 キーユーザー [50%] | 88h | 88h | 8,000 | 8,000 | 8,000 | データ移行 |
| 176 | 7.12 | 移行リハーサル 1 回目 |  | 12d | 2026-10-08 A | 2026-10-26 A | 174, 170, 173, 167, 164 | 100% |  | 2026-09-30 | 2026-10-16 | 12d |  |  | 星野 香織 [80%]; 真鍋 徹; 八木 望; 若林 翔 | 364.8h | 364.8h | 33,984 | 33,984 |  | データ移行 |
| 177 | 7.13 | 移行リハーサル 2 回目 |  | 10d | 2027-01-27 | 2027-02-09 | 176FS+10d, 186 |  |  | 2027-01-12 | 2027-01-25 | 10d | 34d | 35d | 星野 香織 [80%]; 真鍋 徹; 八木 望 [80%]; 若林 翔 [80%] | 272h |  | 25,504 | 25,504 |  | データ移行 |
| 178 | 7.14 | 移行リハーサル 3 回目(本番相当) |  | 8d | 2027-06-29 | 2027-07-08 | 177FS+10d, 37, 204 |  |  | 2027-06-07 | 2027-06-16 | 8d | -14d | 0d | 星野 香織; 真鍋 徹; 八木 望 [80%]; 若林 翔 [80%]; 谷川 治 [30%] | 249.6h |  | 24,019.2 | 24,019.2 |  | データ移行 |
| 179 | 7.15 | 移行データ品質検証 |  | 12d | 2027-07-09 | 2027-07-27 | 178, 175 |  |  | 2027-06-17 | 2027-07-02 | 12d | -11d | 0d | 星野 香織 [60%]; 経理部 キーユーザー; 営業部 キーユーザー [80%]; 野村 茜 [40%] | 268.8h |  | 21,235.2 | 21,235.2 |  | データ移行 |
| 180 | 7.16 | データ移行 準備完了 | milestone | 0d | 2027-07-27 | 2027-07-27 | 179 |  |  | 2027-07-02 | 2027-07-02 | 0d | -11d | 4d |  |  |  |  |  |  | データ移行 |

Notes:
- 174: 品目マスタは初回品質チェックの結果、追加のクレンジングが必要となった。

| ID | WBS | Task | Type | Duration | Start | Finish | Predecessors | Complete | Remaining | Baseline start | Baseline finish | Baseline duration | Total slack | Free slack | Deadline | Resources | Work | Actual work | Cost | Baseline cost | Actual cost | 担当チーム |
| --- | --- | --- | --- | --- | --- | --- | --- | --- | --- | --- | --- | --- | --- | --- | --- | --- | --- | --- | --- | --- | --- | --- |
| 181 | 8 | **8. 統合テスト** |  | 253.5d | 2026-07-10 A | 2027-07-30 |  | 17% | 210.41d | 2026-06-30 | 2027-07-07 | 246d | -16d | 0d |  |  | 7972.8h | 672.17h | 719,837.6 | 704,717.6 | 60,772.48 |  |
| 182 | 8.1 | **8.1 システム統合テスト(SIT)** |  | 173.5d | 2026-07-10 A | 2027-04-02 |  | 35% | 112.78d | 2026-06-30 | 2027-03-10 | 166d | -16d | 0d |  |  | 4200h | 584.17h | 366,387.2 | 351,267.2 | 51,804.48 |  |
| 183 | 8.1.1 | SIT 計画策定 |  | 12d | 2026-07-10 A | 2026-07-29 A | 77 | 100% |  | 2026-06-30 | 2026-07-15 | 12d |  |  |  | 永井 千秋; 菊池 理恵 [30%] | 124.8h | 124.8h | 12,912 | 12,912 | 12,912 | テスト |
| 184 | 8.1.2 | SIT シナリオ・ケース作成 |  | 30d | 2026-07-29 A | 2026-09-14 A | 183 | 100% |  | 2026-07-16 | 2026-09-01 | 30d |  |  |  | 永井 千秋 [50%]; 寺田 悠真; 野村 茜; 平井 翼 [80%] | 792h | 792h | 67,056 | 67,056 | 38,892.48 | テスト |
| 185 | 8.1.3 | SIT 環境・データ準備 |  | 10d | 2026-10-27 A | 2026-11-10 A | 176, 36 | 100% |  | 2026-10-19 | 2026-10-30 | 10d |  |  |  | 福井 奏 [50%]; 若林 翔 [50%] | 80h | 80h | 7,520 | 7,520 |  | テスト |
| 186 | 8.1.4 | SIT 1 巡目 |  | 20d | 2026-12-23 | 2027-01-26 | 184, 185, 149, 89, 100, 111, 122 |  |  | 2026-12-08 | 2027-01-08 | 20d | -16d | 0d |  | 永井 千秋 [80%]; 寺田 悠真; 野村 茜; 平井 翼; 経理部 キーユーザー [50%]; 調達部 キーユーザー [50%] | 768h |  | 63,168 | 63,168 |  | テスト |
| 187 | 8.1.5 | 不具合対応 - 1 巡目 |  | 25d | 2027-01-05 | 2027-02-09 | 186SS+5d |  |  | 2026-12-15 | 2027-01-18 | 20d | -16d | 0d |  | 青木 颯太 [80%]; 内田 康平 [80%]; 岡本 陸 [80%]; 黒田 大和 [80%]; 馬場 敏夫 (SI パートナー) [30%]; 半田 有里 (SI パートナー) [30%] | 760h |  | 75,600 | 60,480 |  | 開発 |
| 188 | 8.1.6 | SIT 2 巡目 |  | 18d | 2027-02-10 | 2027-03-09 | 186, 187 |  |  | 2027-01-19 | 2027-02-12 | 18d | -16d | 0d |  | 永井 千秋 [80%]; 寺田 悠真; 野村 茜; 平井 翼; 生産管理部 キーユーザー [50%]; 営業部 キーユーザー [50%] | 691.2h |  | 56,851.2 | 56,851.2 |  | テスト |
| 189 | 8.1.7 | 不具合対応 - 2 巡目 |  | 15d | 2027-02-18 | 2027-03-11 | 188SS+5d |  |  | 2027-01-26 | 2027-02-16 | 15d | -16d | 0d |  | 池田 七海 [80%]; 榎本 澪 [80%]; 柏木 冴 [80%]; 佐々木 陽菜 [80%] | 384h |  | 34,560 | 34,560 |  | 開発 |
| 190 | 8.1.8 | SIT 3 巡目(業務横断) |  | 15d | 2027-03-12 | 2027-04-02 | 188, 189 |  |  | 2027-02-17 | 2027-03-10 | 15d | -16d | 0d |  | 永井 千秋; 寺田 悠真; 野村 茜; 経理部 キーユーザー [50%]; 調達部 キーユーザー [50%]; 生産管理部 キーユーザー [50%]; 営業部 キーユーザー [50%] | 600h |  | 48,720 | 48,720 |  | テスト |
| 191 | 8.1.9 | SIT 完了 | milestone | 0d | 2027-04-02 | 2027-04-02 | 190 |  |  | 2027-03-10 | 2027-03-10 | 0d | -16d | 0d |  |  |  |  |  |  |  | テスト |
| 192 | 8.2 | **8.2 性能・セキュリティテスト** |  | 82d | 2027-01-27 | 2027-05-31 |  |  |  | 2027-01-12 | 2027-05-07 | 77d | -16d | 0d |  |  | 1052.8h |  | 128,370.4 | 128,370.4 |  |  |
| 193 | 8.2.1 | 性能試験シナリオ設計 |  | 12d | 2027-01-27 | 2027-02-12 | 186 |  |  | 2027-01-12 | 2027-01-27 | 12d | 29d | 33d |  | 小野寺 正樹 [50%]; 岡崎 蓮 (SI パートナー) [50%]; 平井 翼 [50%] | 144h |  | 17,568 | 17,568 |  | テスト |
| 194 | 8.2.2 | 性能・大量データ試験 |  | 15d | 2027-04-05 | 2027-04-23 | 193, 191 |  |  | 2027-03-11 | 2027-04-01 | 15d | -4d | 0d |  | 岡崎 蓮 (SI パートナー) [80%]; 谷川 治 [50%]; 平井 翼 [80%] | 252h |  | 29,556 | 29,556 |  | テスト |
| 195 | 8.2.3 | 性能チューニング |  | 20d | 2027-04-12 | 2027-05-13 | 194SS+5d |  |  | 2027-03-18 | 2027-04-15 | 20d | -4d | 12d |  | 小野寺 正樹 [50%]; 谷川 治 [50%]; 岡崎 蓮 (SI パートナー) [80%] | 288h |  | 39,824 | 39,824 |  | テスト |
| 196 | 8.2.4 | 脆弱性診断 |  | 12d | 2027-04-05 | 2027-04-20 | 191 |  |  | 2027-03-11 | 2027-03-29 | 12d | -16d | 0d |  | 冨田 塁 [80%]; 金子 陽菜 [50%] | 124.8h |  | 15,110.4 | 15,110.4 |  | セキュリティ |
| 197 | 8.2.5 | ペネトレーションテスト |  | 10d | 2027-04-21 | 2027-05-10 | 196 |  |  | 2027-03-30 | 2027-04-12 | 10d | -16d | 0d |  | 冨田 塁 [80%] | 64h |  | 8,192 | 8,192 |  | セキュリティ |
| 198 | 8.2.6 | セキュリティ是正対応 |  | 15d | 2027-05-11 | 2027-05-31 | 197 |  |  | 2027-04-13 | 2027-05-07 | 15d | -16d | 0d |  | 金子 陽菜 [50%]; 福井 奏 [50%]; 池田 七海 [50%] | 180h |  | 18,120 | 18,120 |  | セキュリティ |
| 199 | 8.2.7 | 非機能テスト 完了 | milestone | 0d | 2027-05-31 | 2027-05-31 | 195, 198 |  |  | 2027-05-07 | 2027-05-07 | 0d | -16d | 0d |  |  |  |  |  |  |  | テスト |
| 200 | 8.3 | **8.3 受入テスト(UAT)** |  | 241.5d | 2026-07-29 A | 2027-07-30 |  | 11% | 214.94d | 2026-07-16 | 2027-07-07 | 234d | -16d | 0d |  |  | 2720h | 88h | 225,080 | 225,080 | 8,968 |  |
| 201 | 8.3.1 | UAT 計画策定 |  | 10d | 2026-07-29 A | 2026-08-17 A | 183 | 100% |  | 2026-07-16 | 2026-07-30 | 10d |  |  |  | 永井 千秋 [50%]; 松田 佳奈子 [30%]; 菊池 理恵 [30%] | 88h | 88h | 8,968 | 8,968 | 8,968 | テスト |
| 202 | 8.3.2 | UAT データ・環境準備 |  | 12d | 2027-04-05 | 2027-04-20 | 191, 177 |  |  | 2027-03-11 | 2027-03-29 | 12d | -1d | 0d |  | 福井 奏 [50%]; 若林 翔 [50%]; 野村 茜 [50%] | 144h |  | 12,960 | 12,960 |  | テスト |
| 203 | 8.3.3 | UAT 向け キーユーザー研修 |  | 10d | 2027-04-21 | 2027-05-10 | 202 |  |  | 2027-03-30 | 2027-04-12 | 10d | -1d | 15d |  | 坂本 柚; 中井 岳 [50%]; 経理部 キーユーザー; 調達部 キーユーザー; 生産管理部 キーユーザー; 営業部 キーユーザー | 440h |  | 31,120 | 31,120 |  | チェンジマネジメント |
| 204 | 8.3.4 | UAT 第 1 波(財務・購買) |  | 20d | 2027-06-01 | 2027-06-28 | 203, 199 |  |  | 2027-05-10 | 2027-06-04 | 20d | -16d | 0d |  | 経理部 キーユーザー [200%]; 調達部 キーユーザー [200%]; 永井 千秋 [50%]; 伊藤 直子 [50%]; 村上 仁 [50%] | 880h |  | 69,600 | 69,600 |  | テスト |
| 205 | 8.3.5 | UAT 指摘事項 対応 |  | 18d | 2027-06-08 | 2027-07-01 | 204SS+5d |  |  | 2027-05-17 | 2027-06-09 | 18d | -16d | 0d |  | 青木 颯太 [60%]; 内田 康平 [60%]; 馬場 敏夫 (SI パートナー) [40%]; 栗原 芽衣 (SI パートナー) [40%] | 288h |  | 32,832 | 32,832 |  | 開発 |
| 206 | 8.3.6 | UAT 第 2 波(生産・販売) |  | 20d | 2027-07-02 | 2027-07-30 | 204, 205 |  |  | 2027-06-10 | 2027-07-07 | 20d | -16d | 0d |  | 生産管理部 キーユーザー [200%]; 営業部 キーユーザー [200%]; 永井 千秋 [50%]; 神田 翔平 [50%]; 山下 亜紀 [50%] | 880h |  | 69,600 | 69,600 |  | テスト |
| 207 | 8.3.7 | UAT 承認 | milestone | 0d | 2027-07-30 | 2027-07-30 | 206 |  |  | 2027-07-07 | 2027-07-07 | 0d | -16d | 0d | 2027-07-07 |  |  |  |  |  |  | テスト |

| ID | WBS | Task | Type | Duration | Start | Finish | Predecessors | Complete | Remaining | Baseline start | Baseline finish | Baseline duration | Total slack | Free slack | Deadline | Calendar | Resources | Work | Actual work | Cost | Baseline cost | Actual cost | 担当チーム |
| --- | --- | --- | --- | --- | --- | --- | --- | --- | --- | --- | --- | --- | --- | --- | --- | --- | --- | --- | --- | --- | --- | --- | --- |
| 208 | 9 | **9. 組織変革・教育** |  | 232d | 2026-03-25 A | 2027-03-11 |  | 46% | 125.28d | 2026-03-16 | 2027-02-24 | 227d | 81d | 0d |  |  |  | 2350.4h | 731.2h | 369,921.6 | 369,921.6 | 67,939.2 |  |
| 209 | 9.1 | 変革インパクト分析 |  | 20d | 2026-06-09 A | 2026-07-06 A | 51, 72 | 100% |  | 2026-06-01 | 2026-06-26 | 20d |  |  |  |  | 松田 佳奈子; 横田 圭 [50%] | 240h | 240h | 22,560 | 22,560 | 22,560 | チェンジマネジメント |
| 210 | 9.2 | ステークホルダー分析 |  | 10d | 2026-03-25 A | 2026-04-07 A | 27 | 100% |  | 2026-03-16 | 2026-03-30 | 10d |  |  |  |  | 松田 佳奈子 [80%] | 64h | 64h | 6,528 | 6,528 | 6,528 | チェンジマネジメント |
| 211 | 9.3 | コミュニケーション計画 |  | 10d | 2026-04-08 A | 2026-04-21 A | 210 | 100% |  | 2026-03-31 | 2026-04-13 | 10d |  |  |  |  | 松田 佳奈子 [80%]; 横田 圭 [30%] | 88h | 88h | 8,400 | 8,400 | 8,400 | チェンジマネジメント |
| 212 | 9.4 | 変革コミュニケーション実施 - 2026 年度 上期 |  | 20d | 2026-04-22 A | 2026-05-25 A | 211 | 100% |  | 2026-04-14 | 2026-05-15 | 20d |  |  |  |  | 松田 佳奈子 [40%]; 横田 圭 [30%] | 112h | 112h | 10,272 | 10,272 | 10,272 | チェンジマネジメント |
| 213 | 9.5 | 変革コミュニケーション実施 - 2026 年度 下期 |  | 20d | 2026-07-22 A | 2026-08-21 A | 212FS+40d | 100% |  | 2026-07-13 | 2026-08-10 | 20d |  |  |  |  | 松田 佳奈子 [40%]; 横田 圭 [30%] | 112h | 112h | 10,272 | 10,272 | 10,272 | チェンジマネジメント |
| 214 | 9.6 | 変革コミュニケーション実施 - 2027 年度 上期 |  | 20d | 2026-10-22 A | 2026-11-19 A | 213FS+40d | 100% |  | 2026-10-14 | 2026-11-11 | 20d |  |  |  |  | 松田 佳奈子 [40%]; 横田 圭 [30%] | 112h | 112h | 10,272 | 10,272 |  | チェンジマネジメント |
| 215 | 9.7 | 変革コミュニケーション実施 - 2027 年度 下期 |  | 20d | 2027-01-25 | 2027-02-22 | 214FS+40d |  |  | 2027-01-15 | 2027-02-12 | 20d | 228d |  |  |  | 松田 佳奈子 [40%]; 横田 圭 [30%] | 112h |  | 10,272 | 10,272 |  | チェンジマネジメント |
| 216 | 9.8 | 教育方針・カリキュラム策定 |  | 12d | 2026-07-07 A | 2026-07-23 A | 209 | 100% |  | 2026-06-29 | 2026-07-14 | 12d |  |  |  |  | 坂本 柚 [80%]; 松田 佳奈子 [40%] | 115.2h | 115.2h | 9,907.2 | 9,907.2 | 9,907.2 | チェンジマネジメント |
| 217 | 9.9 | 研修教材 作成 - 財務・管理会計 |  | 15d | 2026-12-02 | 2026-12-22 | 216, 87 |  |  | 2026-11-16 | 2026-12-07 | 15d | 81d | 0d |  |  | 坂本 柚 [80%]; 伊藤 直子 [20%] | 120h |  | 10,128 | 10,128 |  | チェンジマネジメント |
| 218 | 9.10 | 研修教材 作成 - 購買・在庫管理 |  | 15d | 2026-11-25 | 2026-12-15 | 216, 98 |  |  | 2026-11-16 | 2026-12-07 | 15d | 86d | 5d |  |  | 坂本 柚 [80%]; 村上 仁 [20%] | 120h |  | 10,128 | 10,128 |  | チェンジマネジメント |
| 219 | 9.11 | 研修教材 作成 - 生産管理 |  | 15d | 2026-11-25 | 2026-12-15 | 216, 109 |  |  | 2026-11-16 | 2026-12-07 | 15d | 86d | 5d |  |  | 中井 岳 [80%]; 神田 翔平 [20%] | 120h |  | 10,128 | 10,128 |  | チェンジマネジメント |
| 220 | 9.12 | 研修教材 作成 - 販売・物流 |  | 15d | 2026-11-25 | 2026-12-15 | 216, 120 |  |  | 2026-11-16 | 2026-12-07 | 15d | 86d | 5d |  |  | 中井 岳 [80%]; 山下 亜紀 [20%] | 120h |  | 10,128 | 10,128 |  | チェンジマネジメント |
| 221 | 9.13 | トレーナー育成 |  | 12d | 2026-12-23 | 2027-01-14 | 217, 218, 219, 220 |  |  | 2026-12-08 | 2026-12-23 | 12d | 81d | 0d |  |  | 坂本 柚; 中井 岳; 経理部 キーユーザー [50%]; 調達部 キーユーザー [50%]; 生産管理部 キーユーザー [50%]; 営業部 キーユーザー [50%] | 384h |  | 28,032 | 28,032 |  | チェンジマネジメント |
| 222 | 9.14 | エンドユーザー研修 - 本社 |  | 10d | 2027-01-15 | 2027-01-28 | 221 |  |  | 2026-12-24 | 2027-01-13 | 10d | 81d | 0d |  |  | 坂本 柚; 中井 岳; 研修会場・教材費; 出張・旅費 | 160h |  | 69,480 | 69,480 |  | チェンジマネジメント |
| 223 | 9.15 | エンドユーザー研修 - 関東工場 |  | 10d | 2027-01-29 | 2027-02-12 | 222 |  |  | 2027-01-14 | 2027-01-27 | 10d | 81d | 0d |  |  | 坂本 柚; 中井 岳; 研修会場・教材費; 出張・旅費 | 160h |  | 69,480 | 69,480 |  | チェンジマネジメント |
| 224 | 9.16 | エンドユーザー研修 - 関西工場 |  | 10d | 2027-02-15 | 2027-03-01 | 223 |  |  | 2027-01-28 | 2027-02-10 | 10d | 81d | 0d |  |  | 坂本 柚; 中井 岳; 研修会場・教材費; 出張・旅費 | 160h |  | 69,480 | 69,480 |  | チェンジマネジメント |
| 225 | 9.17 | 教育効果 測定・フォロー |  | 8d | 2027-03-02 | 2027-03-11 | 224 |  |  | 2027-02-12 | 2027-02-24 | 8d | 81d | 0d |  |  | 坂本 柚 [50%]; 松田 佳奈子 [30%] | 51.2h |  | 4,454.4 | 4,454.4 |  | チェンジマネジメント |
| 226 | 9.18 | 組織受入 準備完了 | milestone | 0d | 2027-03-11 | 2027-03-11 | 225 |  |  | 2027-02-24 | 2027-02-24 | 0d | 81d | 96d |  |  |  |  |  |  |  |  | チェンジマネジメント |
| 227 | 10 | **10. 移行・稼働 第 1 波(財務・購買)** |  | 119d | 2027-04-05 | 2027-09-29 |  |  |  | 2027-03-11 | 2027-09-06 | 120d | -70.12d | 0d |  |  |  | 2060h |  | 217,548 | 217,548 |  |  |
| 228 | 10.1 | 移行計画 - 第 1 波 |  | 20d | 2027-04-05 | 2027-05-06 | 191 |  |  | 2027-03-11 | 2027-04-08 | 20d | 31d | 45d |  |  | 天野 茂 [50%]; 菊池 理恵 [80%]; 星野 香織 [50%]; 谷川 治 [30%] | 336h |  | 37,280 | 37,280 |  | 移行・稼働 |
| 229 | 10.2 | 移行リハーサル(通し) 1 回目 - 第 1 波 |  | 12d | 2027-07-08 | 2027-07-12 | 228, 178 |  |  | 2027-06-16 | 2027-06-20 | 12d | -55.12d | 9d |  | 24時間 移行作業 | 星野 香織; 真鍋 徹; 谷川 治; 伊藤 直子 [50%] | 336h |  | 35,520 | 35,520 |  | 移行・稼働 |
| 230 | 10.3 | 移行リハーサル(通し) 2 回目 - 第 1 波 |  | 9d | 2027-07-30 | 2027-08-02 | 229FS+13d, 207 |  |  | 2027-07-07 | 2027-07-10 | 9d | -64.12d | 1.88d |  | 24時間 移行作業 | 星野 香織; 真鍋 徹; 谷川 治; 村上 仁 [50%] | 252h |  | 26,640 | 26,640 |  | 移行・稼働 |
| 231 | 10.4 | 移行判定会(準備状況確認) - 第 1 波 |  | 3d | 2027-08-03 | 2027-08-05 | 230, 226, 180 |  |  | 2027-07-12 | 2027-07-14 | 3d | -15d | 0d |  |  | 長谷川 邦男 [30%]; 天野 茂; 杉山 徹 [80%]; 菊池 理恵 [50%] | 62.4h |  | 7,932 | 7,932 |  | 移行・稼働 |
| 232 | 10.5 | 業務データ 締め - 第 1 波 |  | 2d | 2027-08-06 | 2027-08-09 | 231 |  |  | 2027-07-15 | 2027-07-16 | 2d | -15d | 0d |  |  | 経理部 キーユーザー [150%]; 調達部 キーユーザー [150%]; 伊藤 直子 [50%] | 56h |  | 4,144 | 4,144 |  | 移行・稼働 |
| 233 | 10.6 | 本番データ移行 - 第 1 波 |  | 9d | 2027-08-09 | 2027-08-12 | 232 |  |  | 2027-07-16 | 2027-07-19 | 9d | -70.12d | 0d |  | 24時間 移行作業 | 星野 香織; 真鍋 徹; 八木 望; 谷川 治 [80%] | 273.6h |  | 27,504 | 27,504 |  | 移行・稼働 |
| 234 | 10.7 | 移行後 検証 - 第 1 波 |  | 6d | 2027-08-12 | 2027-08-14 | 233 |  |  | 2027-07-19 | 2027-07-21 | 6d | -70.12d | 4.88d |  | 24時間 移行作業 | 経理部 キーユーザー [200%]; 伊藤 直子; 永井 千秋 [50%] | 168h |  | 14,352 | 14,352 |  | 移行・稼働 |
| 235 | 10.8 | Go/No-Go 判定 - 第 1 波 |  | 1d | 2027-08-16 | 2027-08-16 | 234 |  |  | 2027-07-22 | 2027-07-22 | 1d | -15d | 0d |  |  | 長谷川 邦男; 天野 茂; 杉山 徹 | 24h |  | 3,360 | 3,360 |  | 移行・稼働 |
| 236 | 10.9 | 本番稼働 第 1 波 | milestone | 0d | 2027-08-16 | 2027-08-16 | 235 |  |  | 2027-07-22 | 2027-07-22 | 0d | -15d | 0d | 2027-07-22 |  |  |  |  |  |  |  | 移行・稼働 |
| 237 | 10.10 | 稼働支援(ハイパーケア) - 第 1 波 |  | 30d | 2027-08-17 | 2027-09-29 | 236 |  |  | 2027-07-23 | 2027-09-06 | 30d | -13d | 0d |  |  | 伊藤 直子 [50%]; 村上 仁 [50%]; 馬場 敏夫 (SI パートナー) [50%]; 青木 颯太 [50%]; 横田 圭 [30%] | 552h |  | 60,816 | 60,816 |  | 移行・稼働 |

| ID | WBS | Task | Type | Duration | Start | Finish | Predecessors | Complete | Baseline start | Baseline finish | Baseline duration | Total slack | Free slack | Deadline | Calendar | Resources | Work | Cost | Baseline cost | 担当チーム |
| --- | --- | --- | --- | --- | --- | --- | --- | --- | --- | --- | --- | --- | --- | --- | --- | --- | --- | --- | --- | --- |
| 238 | 11 | **11. 移行・稼働 第 2 波(生産・販売)** |  | 71d | 2027-08-17 | 2027-11-30 |  |  | 2027-07-23 | 2027-11-09 | 72d | -61.12d | 0d |  |  |  | 1815.2h | 182,401.6 | 182,401.6 |  |
| 239 | 11.1 | 移行計画 - 第 2 波 |  | 15d | 2027-08-17 | 2027-09-06 | 236 |  | 2027-07-23 | 2027-08-16 | 15d | 2d | 15d |  |  | 菊池 理恵 [80%]; 星野 香織 [50%]; 福井 奏 [30%] | 192h | 19,392 | 19,392 | 移行・稼働 |
| 240 | 11.2 | 移行リハーサル(通し) - 第 2 波 |  | 12d | 2027-09-29 | 2027-10-03 | 239, 237 |  | 2027-09-06 | 2027-09-10 | 12d | -61.12d | 1.88d |  | 24時間 移行作業 | 星野 香織; 八木 望; 福井 奏; 神田 翔平 [50%] | 336h | 34,272 | 34,272 | 移行・稼働 |
| 241 | 11.3 | 移行判定会(準備状況確認) - 第 2 波 |  | 3d | 2027-10-04 | 2027-10-06 | 240 |  | 2027-09-13 | 2027-09-15 | 3d | -13d | 0d |  |  | 長谷川 邦男 [30%]; 天野 茂; 杉山 徹 [80%] | 50.4h | 6,792 | 6,792 | 移行・稼働 |
| 242 | 11.4 | 業務データ 締め - 第 2 波 |  | 2d | 2027-10-07 | 2027-10-08 | 241 |  | 2027-09-16 | 2027-09-17 | 2d | -13d | 0d |  |  | 生産管理部 キーユーザー [150%]; 営業部 キーユーザー [150%]; 山下 亜紀 [50%] | 56h | 4,144 | 4,144 | 移行・稼働 |
| 243 | 11.5 | 本番データ移行 - 第 2 波 |  | 12d | 2027-10-08 | 2027-10-12 | 242 | 10% | 2027-09-17 | 2027-09-21 | 12d | -61.12d | 0d |  | 24時間 移行作業 | 星野 香織; 八木 望; 若林 翔; 福井 奏 [80%] | 364.8h | 35,289.6 | 35,289.6 | 移行・稼働 |
| 244 | 11.6 | 移行後 検証 - 第 2 波 |  | 6d | 2027-10-12 | 2027-10-14 | 243 |  | 2027-09-21 | 2027-09-23 | 6d | -61.12d | 1.88d |  | 24時間 移行作業 | 生産管理部 キーユーザー [200%]; 営業部 キーユーザー [200%]; 山下 亜紀 | 240h | 18,336 | 18,336 | 移行・稼働 |
| 245 | 11.7 | Go/No-Go 判定 - 第 2 波 |  | 1d | 2027-10-15 | 2027-10-15 | 244 |  | 2027-09-24 | 2027-09-24 | 1d | -14d | 0d |  |  | 長谷川 邦男; 天野 茂; 杉山 徹 | 24h | 3,360 | 3,360 | 移行・稼働 |
| 246 | 11.8 | 本番稼働 第 2 波 | milestone | 0d | 2027-10-15 | 2027-10-15 | 245 |  | 2027-09-24 | 2027-09-24 | 0d | -14d | 0d | 2027-09-24 |  |  |  |  |  | 移行・稼働 |
| 247 | 11.9 | 稼働支援(ハイパーケア) - 第 2 波 |  | 30d | 2027-10-18 | 2027-11-30 | 246 |  | 2027-09-27 | 2027-11-09 | 30d | 0d |  |  |  | 神田 翔平 [50%]; 山下 亜紀 [50%]; 半田 有里 (SI パートナー) [50%]; 黒田 大和 [50%]; 横田 圭 [30%] | 552h | 60,816 | 60,816 | 移行・稼働 |
| 248 | 12 | **12. プログラム完了** |  | 111d | 2027-08-18 | 2028-02-02 |  |  | 2027-07-27 | 2028-01-13 | 111d | 0d |  |  |  |  | 1180h | -50,496 | -50,496 |  |
| 249 | 12.1 | 安定稼働 評価 |  | 15d | 2027-12-01 | 2027-12-21 | 247 |  | 2027-11-10 | 2027-12-01 | 15d | 0d |  |  |  | 杉山 徹 [50%]; 菊池 理恵 [50%]; 永井 千秋 [30%] | 156h | 17,016 | 17,016 | プログラム管理 |
| 250 | 12.2 | 効果測定(ベネフィット) |  | 20d | 2027-12-22 | 2028-01-25 | 249 |  | 2027-12-02 | 2028-01-04 | 20d | 0d |  |  |  | 天野 茂 [50%]; 松田 佳奈子 [50%]; 経理部 キーユーザー [50%] | 240h | 24,400 | 24,400 | プログラム管理 |
| 251 | 12.3 | 保守運用への引き継ぎ |  | 20d | 2027-11-01 | 2027-11-30 | 247FF |  | 2027-10-12 | 2027-11-09 | 20d | 15d | 0d |  |  | 杉山 徹 [80%]; 伊藤 直子 [30%]; 山下 亜紀 [30%]; 岡崎 蓮 (SI パートナー) [30%] | 272h | 34,144 | 34,144 | プログラム管理 |
| 252 | 12.4 | 旧システム 並行稼働 |  | 40d | 2027-08-18 | 2027-10-15 | 246SF |  | 2027-07-27 | 2027-09-24 | 40d | 45d | 30d |  |  | 杉山 徹 [20%]; 福井 奏 [30%]; 経理部 キーユーザー [30%] | 256h | 24,320 | 24,320 | インフラ |
| 253 | 12.5 | 旧システム 停止・撤去 |  | 25d | 2027-12-01 | 2028-01-11 | 251, 252 |  | 2027-11-10 | 2027-12-15 | 25d | 15d |  |  |  | 谷川 治 [50%]; 杉山 徹 [30%]; ハードウェア・クラウド基盤費 | 160h | -161,000 | -161,000 | インフラ |
| 254 | 12.6 | 教訓の整理(振り返り) |  | 5d | 2028-01-26 | 2028-02-01 | 250 |  | 2028-01-05 | 2028-01-12 | 5d | 0d |  |  |  | 天野 茂 [50%]; 菊池 理恵 [50%]; 横田 圭 [50%]; 松田 佳奈子 [30%] | 72h | 7,384 | 7,384 | プログラム管理 |
| 255 | 12.7 | 最終ステアリングコミッティ |  | 1d | 2028-02-02 | 2028-02-02 | 254, 253 |  | 2028-01-13 | 2028-01-13 | 1d | 0d |  |  |  | 長谷川 邦男; 天野 茂; 杉山 徹 [50%]; 菊池 理恵 [50%] | 24h | 3,240 | 3,240 | プログラム管理 |
| 256 | 12.8 | プログラム 完了 | milestone | 0d | 2028-02-02 | 2028-02-02 | 255 |  | 2028-01-13 | 2028-01-13 | 0d | 0d |  |  |  |  |  |  |  | プログラム管理 |

Notes:
- 252: 旧システムは第 2 波の本番稼働まで並行稼働する。稼働開始マイルストーンとの SF(開始-終了)関係で表現している。
- 253: 旧システムの保守契約解除に伴う返戻金をマイナス費用として計上。
